# Relación Actividades WBS (Asignaturas y Tareas)Appay

Schedule from MS Project, 2016-09-12 to 2017-05-26, status date 2017-01-26, costs in €, A marks actual dates.
UA

## Calendars

- Estándar: Mon-Fri 09:00-13:00, 15:00-19:00; Sat-Sun off.

## Resources

| Resource | Rate |
| --- | --- |
| Jose | 10 |
| Pablo | 10 |
| Emilio | 10 |
| Sergio | 10 |
| Chema | 10 |

## Schedule

| ID | WBS | Task | Type | Duration | Start | Finish | Predecessors | Complete | Remaining | Actual finish | Baseline start | Baseline finish | Baseline duration | Total slack | Constraint | Resources | Work | Actual work | Cost | Baseline cost | Actual cost |
| --- | --- | --- | --- | --- | --- | --- | --- | --- | --- | --- | --- | --- | --- | --- | --- | --- | --- | --- | --- | --- | --- |
| 1 | 1 | **Hito 0** |  | 28d | 2016-09-12 A | 2016-10-19 |  | 100% |  | 2016-09-12 | 2016-09-12 | 2016-10-19 | 28d |  |  |  |  |  |  |  |  |
| 2 | 1.1 | Rellenar documento de El concepto del proyecto | manual | 1d | 2016-09-12 A | 2016-09-12 A |  | 100% |  |  | 2016-09-12 | 2016-09-12 | 1d |  |  |  |  |  |  |  |  |
| 3 | 1.2 | Rellenar versión inicial del documento de Especificación | manual | 1d | 2016-09-12 A | 2016-09-12 A |  | 100% |  |  | 2016-09-12 | 2016-09-12 | 1d |  |  |  |  |  |  |  |  |
| 4 | 1.3 | Completar y revisar el documento Especificación | manual | 1d | 2016-09-12 A | 2016-09-12 A |  | 100% |  |  | 2016-09-12 | 2016-09-12 | 1d |  |  |  |  |  |  |  |  |
| 5 | 1.4 | Elaborar el presupuesto | manual | 1d | 2016-09-12 A | 2016-09-12 A |  | 100% |  |  | 2016-09-12 | 2016-09-12 | 1d |  |  |  |  |  |  |  |  |
| 6 | 1.5 | Crear WBS del proyecto en Project | manual | 1d | 2016-09-12 A | 2016-09-12 A |  | 100% |  |  | 2016-09-12 | 2016-09-12 | 1d |  |  |  |  |  |  |  |  |
| 7 | 1.6 | Crear plan General(Tareas y precedencias básicas) en Project | manual | 1d | 2016-09-12 A | 2016-09-12 A |  | 100% |  |  | 2016-09-12 | 2016-09-12 | 1d |  |  |  |  |  |  |  |  |
| 8 | 1.7 | Diseñar integralmente la arquitectura técnica: especificar de elementos del backend, tecnologías y relación entre ellos | manual | 1d | 2016-09-12 A | 2016-09-12 A |  | 100% |  |  | 2016-09-12 | 2016-09-12 | 1d |  |  |  |  |  |  |  |  |
| 9 | 1.8 | Especificar elementos y tecnologías de seguridad y autenticación | manual | 1d | 2016-09-12 A | 2016-09-12 A |  | 100% |  |  | 2016-09-12 | 2016-09-12 | 1d |  |  |  |  |  |  |  |  |
| 10 | 1.9 | Especificar API Rest y del Modelo de Datos | manual | 1d | 2016-09-12 A | 2016-09-12 A |  | 100% |  |  | 2016-09-12 | 2016-09-12 | 1d |  |  |  |  |  |  |  |  |
| 11 | 1.10 | Diseñar funcionalidades. (Documentar la especificación de todas las funcionalidades del sistema). | manual | 1d | 2016-09-12 A | 2016-09-12 A |  | 100% |  |  | 2016-09-12 | 2016-09-12 | 1d |  |  |  |  |  |  |  |  |
| 12 | 1.11 | Diseñar Mockups. (Documentar todas las interfaces diseñadas mediante mockups). | manual | 1d | 2016-09-12 A | 2016-09-12 A |  | 100% |  |  | 2016-09-12 | 2016-09-12 | 1d |  |  |  |  |  |  |  |  |
| 13 | 1.12 | Diseñar funcionalidades y visualizaciones del proyecto. | manual | 1d | 2016-09-12 A | 2016-09-12 A |  | 100% |  |  | 2016-09-12 | 2016-09-12 | 1d |  |  |  |  |  |  |  |  |
| 14 | 1.13 | Especificar y visualizar elementos y tecnologías a utilizar. | manual | 1d | 2016-09-12 A | 2016-09-12 A |  | 100% |  |  | 2016-09-12 | 2016-09-12 | 1d |  |  |  |  |  |  |  |  |
| 15 | 2 | **Hito 1** |  | 48d | 2016-10-19 A | 2016-12-23 |  | 99% | 0d |  | 2016-10-19 | 2016-12-23 | 48d |  |  |  | 1211.2h | 1211.2h | 12,112 | 12,112 | 12,112 |
| 16 | 2.1 | Detallar plan iteraciones del mes de Noviembre. Creación Subtareas y precedencias en Project |  | 8d | 2016-10-19 A | 2016-10-28 A |  | 100% |  |  | 2016-10-19 | 2016-10-28 | 8d |  |  | Emilio [25%]; Jose [25%]; Pablo [25%]; Sergio [25%] | 64h | 64h | 640 | 640 | 640 |
| 17 | 2.2 | Diseñar Base de Datos |  | 4d | 2016-10-31 A | 2016-11-03 A | 16 | 100% |  |  | 2016-10-31 | 2016-11-03 | 4d |  | finish no earlier than 2016-11-03 | Pablo [50%]; Sergio [50%] | 32h | 32h | 320 | 320 | 320 |
| 18 | 2.3 | Lean Canvas Cursos |  | 4d | 2016-10-31 A | 2016-11-03 A | 16 | 100% |  |  | 2016-10-31 | 2016-11-03 | 4d |  | finish no earlier than 2016-11-02 | Emilio [50%]; Jose [50%] | 32h | 32h | 320 | 320 | 320 |
| 19 | 2.4 | 1º Iteración 2 de Noviembre | milestone | 0d | 2016-11-03 A | 2016-11-03 A |  | 100% |  |  | 2016-11-03 | 2016-11-03 |  |  | finish no earlier than 2016-11-03 |  |  |  |  |  |  |
| 20 | 2.5 | Formación Backend y Seguridad |  | 2d | 2016-11-04 A | 2016-11-07 A | 19 | 100% |  |  | 2016-11-04 | 2016-11-07 | 2d |  | start no earlier than 2016-11-04 | Emilio [97%] | 15.52h | 15.52h | 155.2 | 155.2 | 155.2 |
| 21 | 2.6 | Formación API RESFULL |  | 2d | 2016-11-04 A | 2016-11-07 A | 19 | 100% |  |  | 2016-11-04 | 2016-11-07 | 2d |  | start no earlier than 2016-11-04 | Sergio [97%] | 15.52h | 15.52h | 155.2 | 155.2 | 155.2 |
| 22 | 2.7 | Configurar e Instalar los elementos de Backend y Seguridad. |  | 7d | 2016-11-08 A | 2016-11-16 A | 20 | 100% |  |  | 2016-11-08 | 2016-11-16 | 7d |  | finish no earlier than 2016-11-16 | Emilio [97%] | 54.32h | 54.32h | 543.2 | 543.2 | 543.2 |
| 23 | 2.8 | Implementar API RESTFULL (debe incluir la documentación). |  | 7d | 2016-11-08 A | 2016-11-16 A | 21 | 100% |  |  | 2016-11-08 | 2016-11-16 | 7d |  | start no earlier than 2016-11-08 | Sergio [97%] | 54.32h | 54.32h | 543.2 | 543.2 | 543.2 |
| 24 | 2.9 | Rellenar documento Gestión de riesgos |  | 9d | 2016-11-04 A | 2016-11-16 A | 19 | 100% |  |  | 2016-11-04 | 2016-11-16 | 9d |  | start no earlier than 2016-11-04 | Emilio [3%]; Sergio [3%] | 4.32h | 4.32h | 43.2 | 43.2 | 43.2 |
| 25 | 2.10 | Detallar plan iteraciones del mes de Noviembre. Asignar recursos a las tareas en Project. |  | 9d | 2016-11-04 A | 2016-11-16 A | 19 | 100% |  |  | 2016-11-04 | 2016-11-16 | 9d |  | start no earlier than 2016-11-04 | Pablo | 72h | 72h | 720 | 720 | 720 |
| 26 | 2.11 | Diseñar Digrama de flujo de interfaces. (Documentación con el mapa de navegación entre interfaces). |  | 3d | 2016-11-04 A | 2016-11-08 A | 19 | 100% |  |  | 2016-11-04 | 2016-11-08 | 3d |  | start no earlier than 2016-11-04 | Jose | 24h | 24h | 240 | 240 | 240 |
| 27 | 2.12 | Diseñar mockups de la estructura de la web. |  | 2d | 2016-11-09 A | 2016-11-10 A | 26 | 100% |  |  | 2016-11-09 | 2016-11-10 | 2d |  |  | Jose | 16h | 16h | 160 | 160 | 160 |
| 28 | 2.13 | Diseñar Pagina Web |  | 3d | 2016-11-11 A | 2016-11-15 A | 27 | 100% |  |  | 2016-11-11 | 2016-11-15 | 3d |  |  | Jose | 24h | 24h | 240 | 240 | 240 |
| 29 | 2.14 | Diseñar Mockup Logo |  | 1d | 2016-11-16 A | 2016-11-16 A | 28 | 100% |  |  | 2016-11-16 | 2016-11-16 | 1d |  |  | Jose [40%] | 3.2h | 3.2h | 32 | 32 | 32 |
| 30 | 2.15 | Elección de colores coorporativos |  | 1d | 2016-11-16 A | 2016-11-16 A | 28 | 100% |  |  | 2016-11-16 | 2016-11-16 | 1d |  |  | Jose [40%] | 3.2h | 3.2h | 32 | 32 | 32 |
| 31 | 2.16 | Crear Logo |  | 1d | 2016-11-16 A | 2016-11-16 A | 28 | 100% |  |  | 2016-11-16 | 2016-11-16 | 1d |  |  | Jose [20%] | 1.6h | 1.6h | 16 | 16 | 16 |
| 32 | 2.17 | Confeccionar Informes de iteración e informe resumen de Hito 1 |  | 1d | 2016-11-16 A | 2016-11-16 A |  | 100% |  |  | 2016-11-16 | 2016-11-16 | 1d |  | start no earlier than 2016-11-16 | Chema [50%] | 4h | 4h | 40 | 40 | 40 |
| 33 | 2.18 | Realizar Informes presenciales de seguimiento |  | 1d | 2016-11-16 A | 2016-11-16 A |  | 100% |  |  | 2016-11-16 | 2016-11-16 | 1d |  | start no earlier than 2016-11-16 | Chema [50%] | 4h | 4h | 40 | 40 | 40 |
| 34 | 2.19 | 2º Iteración 16 de Noviembre | milestone | 0d | 2016-11-16 | 2016-11-16 |  |  |  |  | 2016-11-16 | 2016-11-16 |  | 138d | start no earlier than 2016-11-16 |  |  |  |  |  |  |
| 35 | 2.20 | Desplegar la infraestructura del proyecto |  | 5d | 2016-11-17 A | 2016-11-23 A | 34 | 100% |  |  | 2016-11-17 | 2016-11-23 | 5d |  | start no earlier than 2016-11-17 | Emilio; Sergio | 80h | 80h | 800 | 800 | 800 |
| 36 | 2.21 | Documentar las pruebas de la API RestFull, Pruebas de Seguridad, de carga y rendimiento. |  | 5d | 2016-11-24 A | 2016-11-30 A | 35 | 100% |  |  | 2016-11-24 | 2016-11-30 | 5d |  | finish no earlier than 2016-10-03 | Sergio; Emilio | 80h | 80h | 800 | 800 | 800 |
| 37 | 2.22 | Aplicar el modelo EVA en Project |  | 5d | 2016-11-17 A | 2016-11-23 A | 34 | 100% |  |  | 2016-11-17 | 2016-11-23 | 5d |  | start no earlier than 2016-11-17 | Jose | 40h | 40h | 400 | 400 | 400 |
| 38 | 2.23 | Realizar Storyboard del Video del Logo |  | 5d | 2016-11-24 A | 2016-11-30 A | 37 | 100% |  |  | 2016-11-24 | 2016-11-30 | 5d |  |  | Jose | 40h | 40h | 400 | 400 | 400 |
| 39 | 2.24 | Buscar informacion de repositorios |  | 3d | 2016-11-17 A | 2016-11-21 A | 34 | 100% |  |  | 2016-11-17 | 2016-11-21 | 3d |  | start no earlier than 2016-11-17 | Pablo | 24h | 24h | 240 | 240 | 240 |
| 40 | 2.25 | Enlazar repositorios |  | 5d | 2016-11-22 A | 2016-11-28 A | 39 | 100% |  |  | 2016-11-22 | 2016-11-28 | 5d |  |  | Pablo | 40h | 40h | 400 | 400 | 400 |
| 41 | 2.26 | Confeccionar de Preguntas |  | 2d | 2016-11-29 A | 2016-11-30 A | 40 | 100% |  |  | 2016-11-29 | 2016-11-30 | 2d |  |  | Pablo | 16h | 16h | 160 | 160 | 160 |
| 42 | 2.27 | Confeccionar Informes de iteración e informe resumen de Hito 1 |  | 1d | 2016-11-30 A | 2016-11-30 A |  | 100% |  |  | 2016-11-30 | 2016-11-30 | 1d |  | start no earlier than 2016-11-30 | Chema [50%] | 4h | 4h | 40 | 40 | 40 |
| 43 | 2.28 | Realizar Informes presenciales de seguimiento |  | 1d | 2016-11-30 A | 2016-11-30 A |  | 100% |  |  | 2016-11-30 | 2016-11-30 | 1d |  | start no earlier than 2016-11-30 | Chema [50%] | 4h | 4h | 40 | 40 | 40 |
| 44 | 2.29 | 3º Iteración 30 de Noviembre | milestone | 0d | 2016-11-30 | 2016-11-30 |  |  |  |  | 2016-11-30 | 2016-11-30 |  | 128d | start no earlier than 2016-11-30 |  |  |  |  |  |  |
| 45 | 2.30 | Validar del funcionamiento del Backend del Proyecto |  | 2d | 2016-12-01 A | 2016-12-02 A | 44 | 100% |  |  | 2016-12-01 | 2016-12-02 | 2d |  | start no earlier than 2016-12-01 | Chema | 16h | 16h | 160 | 160 | 160 |
| 46 | 2.31 | Formación WebGL |  | 2d | 2016-12-01 A | 2016-12-02 A | 44 | 100% |  |  | 2016-12-01 | 2016-12-02 | 2d |  | start no earlier than 2016-12-01 | Emilio [50%]; Sergio [50%]; Pablo [50%] | 24h | 24h | 240 | 240 | 240 |
| 47 | 2.32 | Visualizador OpenGL 4.X simple, con datos por programa. Shader básico. |  | 2d | 2016-12-05 A | 2016-12-06 A | 45, 46 | 100% |  |  | 2016-12-05 | 2016-12-06 | 2d |  | start no earlier than 2016-12-01 | Emilio [50%]; Sergio [50%]; Pablo [50%] | 24h | 24h | 240 | 240 | 240 |
| 48 | 2.33 | Gestor de recursos: Parser de objetos en multiples formatos, salida en modo texto |  | 2d | 2016-12-07 A | 2016-12-08 A | 47 | 100% |  |  | 2016-12-07 | 2016-12-08 | 2d |  |  | Emilio [50%]; Pablo [50%]; Sergio [50%] | 24h | 24h | 240 | 240 | 240 |
| 49 | 2.34 | Visualizador OpenGL 4.X simple, con datos por fichero. Shader básico. |  | 2d | 2016-12-09 A | 2016-12-12 A | 48 | 100% |  |  | 2016-12-09 | 2016-12-12 | 2d |  |  | Emilio [50%]; Pablo [50%]; Sergio [50%] | 24h | 24h | 240 | 240 | 240 |
| 50 | 2.35 | Programar Web Cursos |  | 4d | 2016-12-07 A | 2016-12-12 A | 47 | 100% |  |  | 2016-12-07 | 2016-12-12 | 4d |  | start no earlier than 2016-12-07 | Emilio [50%]; Sergio [50%] | 32h | 32h | 320 | 320 | 320 |
| 51 | 2.36 | Formación After Effects |  | 2d | 2016-12-01 A | 2016-12-02 A | 44 | 100% |  |  | 2016-12-01 | 2016-12-02 | 2d |  | start no earlier than 2016-12-01 | Jose | 16h | 16h | 160 | 160 | 160 |
| 52 | 2.37 | Diseñar Idea del Video |  | 3d | 2016-12-05 A | 2016-12-07 A | 51 | 100% |  |  | 2016-12-05 | 2016-12-07 | 3d |  | start no earlier than 2016-12-02 | Jose | 24h | 24h | 240 | 240 | 240 |
| 53 | 2.38 | Detallar plan iteraciones del mes de Diciembre. Creación Subtareas y precedencias en Project |  | 1d | 2016-12-08 A | 2016-12-08 A | 52 | 100% |  |  | 2016-12-08 | 2016-12-08 | 1d |  |  | Jose [50%] | 4h | 4h | 40 | 40 | 40 |
| 54 | 2.39 | Detallar plan iteraciones del mes de Diciembre. Asignar recursos a las tareas en Project. |  | 1d | 2016-12-08 A | 2016-12-08 A | 52 | 100% |  |  | 2016-12-08 | 2016-12-08 | 1d |  |  | Jose [50%] | 4h | 4h | 40 | 40 | 40 |
| 55 | 2.40 | Regristrar tiempos y % de relacion de tareas en Project |  | 1d | 2016-12-09 A | 2016-12-09 A | 54 | 100% |  |  | 2016-12-09 | 2016-12-09 | 1d |  |  | Jose | 8h | 8h | 80 | 80 | 80 |
| 56 | 2.41 | Comparar la planificacion prevista y real en Project Hito 1 |  | 2d | 2016-12-12 A | 2016-12-13 A | 55 | 100% |  |  | 2016-12-12 | 2016-12-13 | 2d |  |  | Chema; Jose | 32h | 32h | 320 | 320 | 320 |
| 57 | 2.42 | Confeccionar Informes de iteración e informe resumen de Hito 1 |  | 1d | 2016-12-14 A | 2016-12-14 A | 56 | 100% |  |  | 2016-12-14 | 2016-12-14 | 1d |  |  | Chema [50%] | 4h | 4h | 40 | 40 | 40 |
| 58 | 2.43 | Realizar Informes presenciales de seguimiento |  | 1d | 2016-12-14 A | 2016-12-14 A | 56 | 100% |  |  | 2016-12-14 | 2016-12-14 | 1d |  |  | Chema [50%] | 4h | 4h | 40 | 40 | 40 |
| 59 | 2.44 | 4º Iteración 14 de Diciembre | milestone | 0d | 2016-12-14 | 2016-12-14 |  |  |  |  | 2016-12-14 | 2016-12-14 |  | 118d | start no earlier than 2016-12-14 |  |  |  |  |  |  |
| 60 | 2.45 | Elaborar la presentación del Hito 1 |  | 2d | 2016-12-15 A | 2016-12-16 A | 59 | 100% |  |  | 2016-12-15 | 2016-12-16 | 2d |  | start no earlier than 2016-12-15 |  |  |  |  |  |  |
| 61 | 2.46 | Diseñar Tutorial |  | 3d | 2016-12-19 A | 2016-12-21 A | 60 | 100% |  |  | 2016-12-19 | 2016-12-21 | 3d |  |  | Emilio; Pablo; Sergio | 72h | 72h | 720 | 720 | 720 |
| 62 | 2.47 | Hacer Vídeo con animación del logo de la empresa |  | 5d | 2016-12-15 A | 2016-12-21 A | 59 | 100% |  |  | 2016-12-15 | 2016-12-21 | 5d |  | start no earlier than 2016-12-15 | Jose | 40h | 40h | 400 | 400 | 400 |
| 63 | 2.48 | Contextualizar el modelo de datos en las especificaciones del proyecto. |  | 4d | 2016-12-15 A | 2016-12-20 A | 59 | 100% |  |  | 2016-12-15 | 2016-12-20 | 4d |  | start no earlier than 2016-12-15 | Chema | 32h | 32h | 320 | 320 | 320 |
| 64 | 2.49 | Definir métricas e indicadores del proyecto. En el contexto indicado se definen los indicadores principales del proyecto. |  | 2d | 2016-12-21 A | 2016-12-22 A | 63 | 100% |  |  | 2016-12-21 | 2016-12-22 | 2d |  |  | Chema | 16h | 16h | 160 | 160 | 160 |
| 65 | 2.50 | Testeo Final del Hito1 |  | 2d | 2016-12-22 A | 2016-12-23 A | 61 | 100% |  |  | 2016-12-22 | 2016-12-23 | 2d |  |  | Emilio [90%]; Pablo [90%]; Sergio [90%] | 43.2h | 43.2h | 432 | 432 | 432 |
| 66 | 2.51 | Exponer la presentación del Hito 1 |  | 1d? | 2016-12-23 A | 2016-12-23 A |  | 100% |  |  | 2016-12-23 | 2016-12-23 | 1d? |  | start no earlier than 2016-12-23 | Emilio [10%]; Jose [70%]; Pablo [10%]; Sergio [10%] | 8h | 8h | 80 | 80 | 80 |
| 67 | 2.52 | Confeccionar Informes de iteración e informe resumen de Hito 1 |  | 1d? | 2016-12-23 A | 2016-12-23 A |  | 100% |  |  | 2016-12-23 | 2016-12-23 | 1d? |  | start no earlier than 2016-12-23 | Chema | 8h | 8h | 80 | 80 | 80 |
| 68 | 2.53 | 5º Iteración 23 de Diciembre | milestone | 0d | 2016-12-23 | 2016-12-23 |  |  |  |  | 2016-12-23 | 2016-12-23 |  | 111d | start no earlier than 2016-12-23 |  |  |  |  |  |  |

Notes:
- 23: Esta tarea la parte de la implementación la tenemos terminada, pero la documentación nos han ampliado el plazo de entrega, asi que no se completara hasta final de año.
- 36: Esta tarea la parte de la implementación la tenemos terminada, pero la documentación nos han ampliado el plazo de entrega, asi que no se completara hasta final de año.
- 46: Al ser formación y no haber tocado nunca WebGL y faltar una tarea por realizar consideramos que continuaremos formandonos hasta terminarla.

| ID | WBS | Task | Type | Duration | Start | Finish | Predecessors | Complete | Actual finish | Baseline start | Baseline finish | Baseline duration | Resources | Work | Actual work | Cost | Baseline cost | Actual cost |
| --- | --- | --- | --- | --- | --- | --- | --- | --- | --- | --- | --- | --- | --- | --- | --- | --- | --- | --- |
| 69 | 3 | **Hito 2** |  | 27d | 2016-12-23 A | 2017-01-30 |  | 100% | 2017-01-23 | 2016-12-23 | 2017-01-30 | 27d |  | 593.6h | 593.6h | 5,936 | 5,936 | 5,936 |
| 70 | 3.1 | Revisar especificación proyecto. |  | 1d | 2016-12-23 A | 2016-12-23 A |  | 100% |  | 2016-12-23 | 2016-12-23 | 1d | Jose [50%] | 4h | 4h | 40 | 40 | 40 |
| 71 | 3.2 | Reestimar proyecto. |  | 1d | 2016-12-23 A | 2016-12-23 A |  | 100% |  | 2016-12-23 | 2016-12-23 | 1d | Jose [50%] | 4h | 4h | 40 | 40 | 40 |
| 72 | 3.3 | Detallar plan iteraciones del mes de Enero. Creación Subtareas y precedencias en Project |  | 1d | 2016-12-26 A | 2016-12-26 A | 70, 71 | 100% |  | 2016-12-26 | 2016-12-26 | 1d | Jose [35%] | 2.8h | 2.8h | 28 | 28 | 28 |
| 73 | 3.4 | Detallar plan Iteraciones del mes de Enero. Asignar recursos a las tareas en Project. |  | 1d | 2016-12-26 A | 2016-12-26 A | 70, 71 | 100% |  | 2016-12-26 | 2016-12-26 | 1d | Jose [35%] | 2.8h | 2.8h | 28 | 28 | 28 |
| 74 | 3.5 | Registrar de tiempos y % de realización de tareas en Project |  | 1d | 2016-12-26 A | 2016-12-26 A | 70, 71 | 100% |  | 2016-12-26 | 2016-12-26 | 1d | Jose [30%] | 2.4h | 2.4h | 24 | 24 | 24 |
| 75 | 3.6 | Diseñar Mockup Cartel |  | 2d | 2016-12-27 A | 2016-12-28 A | 72, 73, 74 | 100% |  | 2016-12-27 | 2016-12-28 | 2d | Jose [50%] | 8h | 8h | 80 | 80 | 80 |
| 76 | 3.7 | Desarrollar idea Cartel |  | 2d | 2016-12-27 A | 2016-12-28 A | 72, 73, 74 | 100% |  | 2016-12-27 | 2016-12-28 | 2d | Jose [50%] | 8h | 8h | 80 | 80 | 80 |
| 77 | 3.8 | Vacaciones de Navidad |  | 3d | 2016-12-29 A | 2017-01-02 A | 76, 75 | 100% |  | 2016-12-29 | 2017-01-02 | 3d | Chema; Emilio; Jose; Pablo; Sergio | 120h | 120h | 1,200 | 1,200 | 1,200 |
| 78 | 3.9 | Documentar la relación entre back-end y front-end (detalle desde dónde se llama a la API en el front-end). - Integrar Front-Back. |  | 2d | 2017-01-03 A | 2017-01-04 A | 77 | 100% |  | 2017-01-03 | 2017-01-04 | 2d | Emilio | 16h | 16h | 160 | 160 | 160 |
| 79 | 3.10 | Añadir API´s de redes sociales |  | 1d | 2017-01-05 A | 2017-01-05 A | 78 | 100% |  | 2017-01-05 | 2017-01-05 | 1d | Emilio | 8h | 8h | 80 | 80 | 80 |
| 80 | 3.11 | Documentar sobre toma de decisión, versiones, codificación, internacionalización (varias lenguas), instalación sobre servidor de frameworks… - Arquitectura tecnológica. |  | 3d | 2017-01-03 A | 2017-01-05 A | 77 | 100% |  | 2017-01-03 | 2017-01-05 | 3d | Pablo | 24h | 24h | 240 | 240 | 240 |
| 81 | 3.12 | Documentar el SEO. (Definir aspectos SEO como son palabras clave, estilos de textos, posiciones de texto, como se va a potenciar esto (landing, blog, etc…), URL amigables). |  | 2d | 2017-01-03 A | 2017-01-04 A | 77 | 100% |  | 2017-01-03 | 2017-01-04 | 2d | Chema | 16h | 16h | 160 | 160 | 160 |
| 82 | 3.13 | Incorporar Open data, API's, y otras fuentes heterogéneas |  | 2d | 2017-01-05 A | 2017-01-06 A | 81 | 100% |  | 2017-01-05 | 2017-01-06 | 2d | Chema | 16h | 16h | 160 | 160 | 160 |
| 83 | 3.14 | Integrar de datos (basado en lo visto en el punto anterior de fuentes de datos) |  | 2d | 2017-01-09 A | 2017-01-10 A | 82 | 100% |  | 2017-01-09 | 2017-01-10 | 2d | Chema | 16h | 16h | 160 | 160 | 160 |
| 84 | 3.15 | Documentar detallandamente la imagen corporativa del servicio (colores, estilos, esencia para la experiencia de usuario, consideraciones de usabilidad y accesibliidad) |  | 4d | 2017-01-03 A | 2017-01-06 A | 77 | 100% |  | 2017-01-03 | 2017-01-06 | 4d | Sergio [50%]; Jose [50%] | 32h | 32h | 320 | 320 | 320 |
| 85 | 3.16 | Hacer el repositorio |  | 1d | 2017-01-09 A | 2017-01-09 A | 84 | 100% |  | 2017-01-09 | 2017-01-09 | 1d | Sergio | 8h | 8h | 80 | 80 | 80 |
| 86 | 3.17 | Cartel juego/proyecto |  | 1d | 2017-01-09 A | 2017-01-09 A | 84 | 100% |  | 2017-01-09 | 2017-01-09 | 1d | Jose | 8h | 8h | 80 | 80 | 80 |
| 87 | 3.18 | Formación Angular 2 |  | 9d | 2017-01-10 A | 2017-01-20 A | 85, 86 | 100% |  | 2017-01-10 | 2017-01-20 | 9d | Emilio [50%]; Jose [50%]; Pablo [50%]; Sergio [50%] | 144h | 144h | 1,440 | 1,440 | 1,440 |
| 88 | 3.19 | Formación Ionic 2 |  | 9d | 2017-01-10 A | 2017-01-20 A | 85, 86 | 100% |  | 2017-01-10 | 2017-01-20 | 9d | Emilio [50%]; Jose [50%]; Pablo [50%]; Sergio [50%] | 144h | 144h | 1,440 | 1,440 | 1,440 |
| 89 | 3.20 | Diseñar Web Coorporativa |  | 1d | 2017-01-23 A | 2017-01-23 A | 88, 87 | 100% |  | 2017-01-23 | 2017-01-23 | 1d | Emilio [30%]; Sergio [30%]; Jose [20%]; Pablo [20%] | 8h | 8h | 80 | 80 | 80 |
| 90 | 3.21 | Comprar la planificacion prevista y real en Project Hito 2 |  | 1d | 2017-01-23 A | 2017-01-23 A | 87, 88 | 100% |  | 2017-01-23 | 2017-01-23 | 1d | Jose [20%] | 1.6h | 1.6h | 16 | 16 | 16 |
| 91 | 4 | **Hito 3** |  | 48d | 2017-01-30 | 2017-04-05 |  |  |  | 2017-01-30 | 2017-04-05 | 48d |  |  |  |  |  |  |
| 92 | 4.1 | Confeccionar Tutorial | manual | 1d? | 2017-01-30 | 2017-01-30 |  |  |  | 2017-01-30 | 2017-01-30 | 1d? |  |  |  |  |  |  |
| 93 | 4.2 | Testeo de Web | manual | 1d? | 2017-01-30 | 2017-01-30 |  |  |  | 2017-01-30 | 2017-01-30 | 1d? |  |  |  |  |  |  |
| 94 | 4.3 | Subida de Web | manual | 1d? | 2017-01-30 | 2017-01-30 |  |  |  | 2017-01-30 | 2017-01-30 | 1d? |  |  |  |  |  |  |
| 95 | 4.4 | Busqueda de Videos relacionados con productos | manual | 1d? | 2017-01-30 | 2017-01-30 |  |  |  | 2017-01-30 | 2017-01-30 | 1d? |  |  |  |  |  |  |
| 96 | 4.5 | Detallar plan iteraciones del mes de Febrero-Marzo. Creación Subtareas y precedencias en Project | manual | 1d? | 2017-01-30 | 2017-01-30 |  |  |  | 2017-01-30 | 2017-01-30 | 1d? |  |  |  |  |  |  |
| 97 | 4.6 | Detallar plan iteraciones del mes de Febrero-Marzo Asignar recursos a las tareas en Project. | manual | 1d? | 2017-01-30 | 2017-01-30 |  |  |  | 2017-01-30 | 2017-01-30 | 1d? |  |  |  |  |  |  |
| 98 | 4.7 | Registrar de tiempos y % de realización de tareas en Project | manual | 1d? | 2017-01-30 | 2017-01-30 |  |  |  | 2017-01-30 | 2017-01-30 | 1d? |  |  |  |  |  |  |
| 99 | 4.8 | Comparar la planificación prevista y real en Project hito 3. | manual | 1d? | 2017-01-30 | 2017-01-30 |  |  |  | 2017-01-30 | 2017-01-30 | 1d? |  |  |  |  |  |  |
| 100 | 4.9 | Confeccionar Informes de iteración e informe resumen Hito 3 | manual | 1d? | 2017-01-30 | 2017-01-30 |  |  |  | 2017-01-30 | 2017-01-30 | 1d? |  |  |  |  |  |  |
| 101 | 4.10 | Elaborar la presentación del Hito 3 | manual | 1d? | 2017-01-30 | 2017-01-30 |  |  |  | 2017-01-30 | 2017-01-30 | 1d? |  |  |  |  |  |  |
| 102 | 4.11 | Implementar Front-end más documentar. (Código , Implementación de las funcionalidades en front-end relación de las interfaces y funcionalidades que se están implementando y en que momento están implementadas). | manual | 1d? | 2017-01-30 | 2017-01-30 |  |  |  | 2017-01-30 | 2017-01-30 | 1d? |  |  |  |  |  |  |
| 103 | 4.12 | Arbol de la escena: Tipos de datos para nodos (completo) y entidades (sólo clase padre; clases hijas sin contenido), construcción del árbol, recorrido del árbol, salida en modo texto | manual | 1d? | 2017-01-30 | 2017-01-30 |  |  |  | 2017-01-30 | 2017-01-30 | 1d? |  |  |  |  |  |  |
| 104 | 4.13 | Arbol de la escena: Tipos de datos para entidades de tipo transformacion (traslación, rotación y escalado relativos y absolutos. Otras transformaciones). Salida en modo texto | manual | 1d? | 2017-01-30 | 2017-01-30 |  |  |  | 2017-01-30 | 2017-01-30 | 1d? |  |  |  |  |  |  |
| 105 | 4.14 | Arbol de la escena: Tipos de datos para entidades de tipo cámara y luz (cámaras y luces de dos tipos). Salida en modo texto | manual | 1d? | 2017-01-30 | 2017-01-30 |  |  |  | 2017-01-30 | 2017-01-30 | 1d? |  |  |  |  |  |  |
| 106 | 4.15 | Arbol de la escena: Tipos de datos para entidades de tipo malla. Salida en modo texto | manual | 1d? | 2017-01-30 | 2017-01-30 |  |  |  | 2017-01-30 | 2017-01-30 | 1d? |  |  |  |  |  |  |
| 107 | 4.16 | Arbol de la escena: Tipos de datos para entidades de tipo animación (cuadro a cuadro). Salida en modo texto | manual | 1d? | 2017-01-30 | 2017-01-30 |  |  |  | 2017-01-30 | 2017-01-30 | 1d? |  |  |  |  |  |  |
| 108 | 4.17 | Gestor de recursos: Carga de modelos en formato múltiple en las entidades de tipo malla. Carga de varios ficheros para animación. Salida en modo texto | manual | 1d? | 2017-01-30 | 2017-01-30 |  |  |  | 2017-01-30 | 2017-01-30 | 1d? |  |  |  |  |  |  |
| 109 | 4.18 | Visualizador OpenGL 4.X de las entidades tipo malla. Shader básico. Integración con el motor. Sin materiales, texturas, cámara ni luces | manual | 1d? | 2017-01-30 | 2017-01-30 |  |  |  | 2017-01-30 | 2017-01-30 | 1d? |  |  |  |  |  |  |
| 110 | 4.19 | Visualizador OpenGL 4.X de las entidades tipo malla. Shader básico. Con cámaras y luces de varios tipos. Visualización con registro de cámaras y luces. | manual | 1d? | 2017-01-30 | 2017-01-30 |  |  |  | 2017-01-30 | 2017-01-30 | 1d? |  |  |  |  |  |  |
| 111 | 4.20 | Gestor de recursos: Carga de materiales y texturas. Salida en modo texto | manual | 1d? | 2017-01-30 | 2017-01-30 |  |  |  | 2017-01-30 | 2017-01-30 | 1d? |  |  |  |  |  |  |
| 112 | 4.21 | Visualizador OpenGL 4.X de las entidades tipo malla. Shader básico. Añadiendo materiales y texturas. | manual | 1d? | 2017-01-30 | 2017-01-30 |  |  |  | 2017-01-30 | 2017-01-30 | 1d? |  |  |  |  |  |  |
| 113 | 4.22 | Fachada: Crear de una fachada entre el motor y la aplicación. | manual | 1d? | 2017-01-30 | 2017-01-30 |  |  |  | 2017-01-30 | 2017-01-30 | 1d? |  |  |  |  |  |  |
| 114 | 4.23 | Visualizador OpenGL 4.X con cuatro shaders avanzados | manual | 1d? | 2017-01-30 | 2017-01-30 |  |  |  | 2017-01-30 | 2017-01-30 | 1d? |  |  |  |  |  |  |
| 115 | 4.24 | IGC: Aplicación: cargador de modelos, movimiento del modelo, de las luces y de la cámara. Cambio de modelo, materiales y texturas. Animaciones. Integración con el motor; ICED: Integración con el videojuego, sustitución de Irrlicht por el motor propio | manual | 1d? | 2017-01-30 | 2017-01-30 |  |  |  | 2017-01-30 | 2017-01-30 | 1d? |  |  |  |  |  |  |
| 116 | 4.25 | Desplegar la infraestructura del proyecto. | manual | 1d? | 2017-01-30 | 2017-01-30 |  |  |  | 2017-01-30 | 2017-01-30 | 1d? |  |  |  |  |  |  |
| 117 | 4.26 | Definir cuadros de mando, implementación. | manual | 1d? | 2017-01-30 | 2017-01-30 |  |  |  | 2017-01-30 | 2017-01-30 | 1d? |  |  |  |  |  |  |
| 118 | 4.27 | Definición de KPI's implementación. | manual | 1d? | 2017-01-30 | 2017-01-30 |  |  |  | 2017-01-30 | 2017-01-30 | 1d? |  |  |  |  |  |  |
| 119 | 4.28 | Valorar cuadro de mando y KPI's definidos e incorporación de nuevos elementos según datos | manual | 1d? | 2017-01-30 | 2017-01-30 |  |  |  | 2017-01-30 | 2017-01-30 | 1d? |  |  |  |  |  |  |

| ID | WBS | Task | Type | Duration | Start | Finish | Baseline start | Baseline finish | Baseline duration |
| --- | --- | --- | --- | --- | --- | --- | --- | --- | --- |
| 120 | 5 | **Hito 4** |  | 38d | 2017-04-05 | 2017-05-26 | 2017-04-05 | 2017-05-26 | 38d |
| 121 | 5.1 | Detallar plan iteraciones del mes de Abril-Mayo. Creación Subtareas y precedencias en Project | manual | 1d? | 2017-04-05 | 2017-04-05 | 2017-04-05 | 2017-04-05 | 1d? |
| 122 | 5.2 | Detallar plan iteraciones del mes de Abril-Mayo. Asignar recursos a las tareas en Project. | manual | 1d? | 2017-04-05 | 2017-04-05 | 2017-04-05 | 2017-04-05 | 1d? |
| 123 | 5.3 | Registrar de tiempos y % de realización de tareas en Project | manual | 1d? | 2017-04-05 | 2017-04-05 | 2017-04-05 | 2017-04-05 | 1d? |
| 124 | 5.4 | Comparar la planificación prevista y real en Project Hito 4. | manual | 1d? | 2017-04-05 | 2017-04-05 | 2017-04-05 | 2017-04-05 | 1d? |
| 125 | 5.5 | Elaborar la presentación del Hito 4 | manual | 1d? | 2017-04-05 | 2017-04-05 | 2017-04-05 | 2017-04-05 | 1d? |
| 126 | 5.6 | Exponer la presentación del Hito 4. | manual | 1d? | 2017-04-05 | 2017-04-05 | 2017-04-05 | 2017-04-05 | 1d? |
| 127 | 5.7 | Documentar pruebas de las funcionalidades principales, pruebas de la aplicación demostrando que no hay errores, pruebas de seguridad de front end, pruebas de rendimiento | manual | 1d? | 2017-04-05 | 2017-04-05 | 2017-04-05 | 2017-04-05 | 1d? |
| 128 | 5.8 | Validar las funcionalidades (comprobar que realmente han sido implementadas), las funcionalidades han quedado recogidas en las interfaces implementadas. | manual | 1d? | 2017-04-05 | 2017-04-05 | 2017-04-05 | 2017-04-05 | 1d? |
| 129 | 5.9 | Informes presenciales de seguimiento: presencial en sesiones de laboratorio todo el grupo. | manual | 1d? | 2017-04-05 | 2017-04-05 | 2017-04-05 | 2017-04-05 | 1d? |
| 130 | 5.10 | Optimizar el motor (2 técnicas) | manual | 1d? | 2017-04-05 | 2017-04-05 | 2017-04-05 | 2017-04-05 | 1d? |
| 131 | 5.11 | Efectos visuales (2 efectos) | manual | 1d? | 2017-04-05 | 2017-04-05 | 2017-04-05 | 2017-04-05 | 1d? |
| 132 | 5.12 | Extras (a determinar por el grupo) | manual | 1d? | 2017-04-05 | 2017-04-05 | 2017-04-05 | 2017-04-05 | 1d? |
| 133 | 5.13 | Modelar articulos/productos | manual | 1d? | 2017-04-05 | 2017-04-05 | 2017-04-05 | 2017-04-05 | 1d? |
| 134 | 5.14 | Realizar Storyboard del Video promocional | manual | 1d? | 2017-04-05 | 2017-04-05 | 2017-04-05 | 2017-04-05 | 1d? |
| 135 | 5.15 | Desarrollo idea Trailer | manual | 1d? | 2017-04-05 | 2017-04-05 | 2017-04-05 | 2017-04-05 | 1d? |
| 136 | 5.16 | Tráiler juego/proyecto | manual | 1d? | 2017-04-05 | 2017-04-05 | 2017-04-05 | 2017-04-05 | 1d? |
| 137 | 5.17 | Validación del funcionamiento | manual | 1d? | 2017-04-05 | 2017-04-05 | 2017-04-05 | 2017-04-05 | 1d? |
| 139 | 6 | PM | manual | 1d | 2016-10-03 | 2016-10-03 | 2016-10-03 | 2016-10-03 | 1d |
| 140 | 7 | SMBI | manual | 1d | 2016-10-03 | 2016-10-03 | 2016-10-03 | 2016-10-03 | 1d |
| 141 | 8 | SMA | manual | 1d | 2016-10-03 | 2016-10-03 | 2016-10-03 | 2016-10-03 | 1d |
| 142 | 9 | TAG | manual | 1d | 2016-10-03 | 2016-10-03 | 2016-10-03 | 2016-10-03 | 1d |
| 143 | 10 | SDM | manual | 1d | 2016-10-03 | 2016-10-03 | 2016-10-03 | 2016-10-03 | 1d |
| 144 | 11 | E | manual | 1d | 2016-10-03 | 2016-10-03 | 2016-10-03 | 2016-10-03 | 1d |
| 145 | 12 | PD | manual | 1d | 2016-10-03 | 2016-10-03 | 2016-10-03 | 2016-10-03 | 1d |
| 146 | 13 | NM | manual | 1d | 2016-10-03 | 2016-10-03 | 2016-10-03 | 2016-10-03 | 1d |
