# Relación Actividades WBS (Asignaturas y Tareas)Appay

Schedule from MS Project, 2016-09-12 to 2017-05-26, status date 2017-04-26, costs in €, A marks actual dates.
UA

## Calendars

- Estándar: Mon-Fri 09:00-13:00, 15:00-19:00; Sat-Sun off.

## Resources

| Resource | Rate |
| --- | --- |
| Jose | 10 |
| Pablo | 10 |
| Emilio | 10 |
| Sergio | 10 |
| Chema | 10 |

## Schedule

| ID | WBS | Task | Type | Duration | Start | Finish | Predecessors | Complete | Remaining | Actual finish | Baseline start | Baseline finish | Baseline duration | Total slack | Constraint | Resources | Work | Actual work | Cost | Baseline cost | Actual cost |
| --- | --- | --- | --- | --- | --- | --- | --- | --- | --- | --- | --- | --- | --- | --- | --- | --- | --- | --- | --- | --- | --- |
| 1 | 1 | **Hito 0** |  | 28d | 2016-09-12 A | 2016-10-19 |  | 100% |  | 2016-09-12 | 2016-09-12 | 2016-10-19 | 28d |  |  |  |  |  |  |  |  |
| 2 | 1.1 | Rellenar documento de El concepto del proyecto | manual | 1d | 2016-09-12 A | 2016-09-12 A |  | 100% |  |  | 2016-09-12 | 2016-09-12 | 1d |  |  |  |  |  |  |  |  |
| 3 | 1.2 | Rellenar versión inicial del documento de Especificación | manual | 1d | 2016-09-12 A | 2016-09-12 A |  | 100% |  |  | 2016-09-12 | 2016-09-12 | 1d |  |  |  |  |  |  |  |  |
| 4 | 1.3 | Completar y revisar el documento Especificación | manual | 1d | 2016-09-12 A | 2016-09-12 A |  | 100% |  |  | 2016-09-12 | 2016-09-12 | 1d |  |  |  |  |  |  |  |  |
| 5 | 1.4 | Elaborar el presupuesto | manual | 1d | 2016-09-12 A | 2016-09-12 A |  | 100% |  |  | 2016-09-12 | 2016-09-12 | 1d |  |  |  |  |  |  |  |  |
| 6 | 1.5 | Crear WBS del proyecto en Project | manual | 1d | 2016-09-12 A | 2016-09-12 A |  | 100% |  |  | 2016-09-12 | 2016-09-12 | 1d |  |  |  |  |  |  |  |  |
| 7 | 1.6 | Crear plan General(Tareas y precedencias básicas) en Project | manual | 1d | 2016-09-12 A | 2016-09-12 A |  | 100% |  |  | 2016-09-12 | 2016-09-12 | 1d |  |  |  |  |  |  |  |  |
| 8 | 1.7 | Diseñar integralmente la arquitectura técnica: especificar de elementos del backend, tecnologías y relación entre ellos | manual | 1d | 2016-09-12 A | 2016-09-12 A |  | 100% |  |  | 2016-09-12 | 2016-09-12 | 1d |  |  |  |  |  |  |  |  |
| 9 | 1.8 | Especificar elementos y tecnologías de seguridad y autenticación | manual | 1d | 2016-09-12 A | 2016-09-12 A |  | 100% |  |  | 2016-09-12 | 2016-09-12 | 1d |  |  |  |  |  |  |  |  |
| 10 | 1.9 | Especificar API Rest y del Modelo de Datos | manual | 1d | 2016-09-12 A | 2016-09-12 A |  | 100% |  |  | 2016-09-12 | 2016-09-12 | 1d |  |  |  |  |  |  |  |  |
| 11 | 1.10 | Diseñar funcionalidades. (Documentar la especificación de todas las funcionalidades del sistema). | manual | 1d | 2016-09-12 A | 2016-09-12 A |  | 100% |  |  | 2016-09-12 | 2016-09-12 | 1d |  |  |  |  |  |  |  |  |
| 12 | 1.11 | Diseñar Mockups. (Documentar todas las interfaces diseñadas mediante mockups). | manual | 1d | 2016-09-12 A | 2016-09-12 A |  | 100% |  |  | 2016-09-12 | 2016-09-12 | 1d |  |  |  |  |  |  |  |  |
| 13 | 1.12 | Diseñar funcionalidades y visualizaciones del proyecto. | manual | 1d | 2016-09-12 A | 2016-09-12 A |  | 100% |  |  | 2016-09-12 | 2016-09-12 | 1d |  |  |  |  |  |  |  |  |
| 14 | 1.13 | Especificar y visualizar elementos y tecnologías a utilizar. | manual | 1d | 2016-09-12 A | 2016-09-12 A |  | 100% |  |  | 2016-09-12 | 2016-09-12 | 1d |  |  |  |  |  |  |  |  |
| 15 | 2 | **Hito 1** |  | 48d | 2016-10-19 A | 2016-12-23 |  | 99% | 0d |  | 2016-10-19 | 2016-12-23 | 48d |  |  |  | 1211.2h | 1211.2h | 12,112 | 12,112 | 12,112 |
| 16 | 2.1 | Detallar plan iteraciones del mes de Noviembre. Creación Subtareas y precedencias en Project |  | 8d | 2016-10-19 A | 2016-10-28 A |  | 100% |  |  | 2016-10-19 | 2016-10-28 | 8d |  |  | Emilio [25%]; Jose [25%]; Pablo [25%]; Sergio [25%] | 64h | 64h | 640 | 640 | 640 |
| 17 | 2.2 | Diseñar Base de Datos |  | 4d | 2016-10-31 A | 2016-11-03 A | 16 | 100% |  |  | 2016-10-31 | 2016-11-03 | 4d |  | finish no earlier than 2016-11-03 | Pablo [50%]; Sergio [50%] | 32h | 32h | 320 | 320 | 320 |
| 18 | 2.3 | Lean Canvas Cursos |  | 4d | 2016-10-31 A | 2016-11-03 A | 16 | 100% |  |  | 2016-10-31 | 2016-11-03 | 4d |  | finish no earlier than 2016-11-02 | Emilio [50%]; Jose [50%] | 32h | 32h | 320 | 320 | 320 |
| 19 | 2.4 | 1º Iteración 2 de Noviembre | milestone | 0d | 2016-11-03 A | 2016-11-03 A |  | 100% |  |  | 2016-11-03 | 2016-11-03 |  |  | finish no earlier than 2016-11-03 |  |  |  |  |  |  |
| 20 | 2.5 | Formación Backend y Seguridad |  | 2d | 2016-11-04 A | 2016-11-07 A | 19 | 100% |  |  | 2016-11-04 | 2016-11-07 | 2d |  | start no earlier than 2016-11-04 | Emilio [97%] | 15.52h | 15.52h | 155.2 | 155.2 | 155.2 |
| 21 | 2.6 | Formación API RESFULL |  | 2d | 2016-11-04 A | 2016-11-07 A | 19 | 100% |  |  | 2016-11-04 | 2016-11-07 | 2d |  | start no earlier than 2016-11-04 | Sergio [97%] | 15.52h | 15.52h | 155.2 | 155.2 | 155.2 |
| 22 | 2.7 | Configurar e Instalar los elementos de Backend y Seguridad. |  | 7d | 2016-11-08 A | 2016-11-16 A | 20 | 100% |  |  | 2016-11-08 | 2016-11-16 | 7d |  | finish no earlier than 2016-11-16 | Emilio [97%] | 54.32h | 54.32h | 543.2 | 543.2 | 543.2 |
| 23 | 2.8 | Implementar API RESTFULL (debe incluir la documentación). |  | 7d | 2016-11-08 A | 2016-11-16 A | 21 | 100% |  |  | 2016-11-08 | 2016-11-16 | 7d |  | start no earlier than 2016-11-08 | Sergio [97%] | 54.32h | 54.32h | 543.2 | 543.2 | 543.2 |
| 24 | 2.9 | Rellenar documento Gestión de riesgos |  | 9d | 2016-11-04 A | 2016-11-16 A | 19 | 100% |  |  | 2016-11-04 | 2016-11-16 | 9d |  | start no earlier than 2016-11-04 | Emilio [3%]; Sergio [3%] | 4.32h | 4.32h | 43.2 | 43.2 | 43.2 |
| 25 | 2.10 | Detallar plan iteraciones del mes de Noviembre. Asignar recursos a las tareas en Project. |  | 9d | 2016-11-04 A | 2016-11-16 A | 19 | 100% |  |  | 2016-11-04 | 2016-11-16 | 9d |  | start no earlier than 2016-11-04 | Pablo | 72h | 72h | 720 | 720 | 720 |
| 26 | 2.11 | Diseñar Digrama de flujo de interfaces. (Documentación con el mapa de navegación entre interfaces). |  | 3d | 2016-11-04 A | 2016-11-08 A | 19 | 100% |  |  | 2016-11-04 | 2016-11-08 | 3d |  | start no earlier than 2016-11-04 | Jose | 24h | 24h | 240 | 240 | 240 |
| 27 | 2.12 | Diseñar mockups de la estructura de la web. |  | 2d | 2016-11-09 A | 2016-11-10 A | 26 | 100% |  |  | 2016-11-09 | 2016-11-10 | 2d |  |  | Jose | 16h | 16h | 160 | 160 | 160 |
| 28 | 2.13 | Diseñar Pagina Web |  | 3d | 2016-11-11 A | 2016-11-15 A | 27 | 100% |  |  | 2016-11-11 | 2016-11-15 | 3d |  |  | Jose | 24h | 24h | 240 | 240 | 240 |
| 29 | 2.14 | Diseñar Mockup Logo |  | 1d | 2016-11-16 A | 2016-11-16 A | 28 | 100% |  |  | 2016-11-16 | 2016-11-16 | 1d |  |  | Jose [40%] | 3.2h | 3.2h | 32 | 32 | 32 |
| 30 | 2.15 | Elección de colores coorporativos |  | 1d | 2016-11-16 A | 2016-11-16 A | 28 | 100% |  |  | 2016-11-16 | 2016-11-16 | 1d |  |  | Jose [40%] | 3.2h | 3.2h | 32 | 32 | 32 |
| 31 | 2.16 | Crear Logo |  | 1d | 2016-11-16 A | 2016-11-16 A | 28 | 100% |  |  | 2016-11-16 | 2016-11-16 | 1d |  |  | Jose [20%] | 1.6h | 1.6h | 16 | 16 | 16 |
| 32 | 2.17 | Confeccionar Informes de iteración e informe resumen de Hito 1 |  | 1d | 2016-11-16 A | 2016-11-16 A |  | 100% |  |  | 2016-11-16 | 2016-11-16 | 1d |  | start no earlier than 2016-11-16 | Chema [50%] | 4h | 4h | 40 | 40 | 40 |
| 33 | 2.18 | Realizar Informes presenciales de seguimiento |  | 1d | 2016-11-16 A | 2016-11-16 A |  | 100% |  |  | 2016-11-16 | 2016-11-16 | 1d |  | start no earlier than 2016-11-16 | Chema [50%] | 4h | 4h | 40 | 40 | 40 |
| 34 | 2.19 | 2º Iteración 16 de Noviembre | milestone | 0d | 2016-11-16 | 2016-11-16 |  |  |  |  | 2016-11-16 | 2016-11-16 |  | 138d | start no earlier than 2016-11-16 |  |  |  |  |  |  |
| 35 | 2.20 | Desplegar la infraestructura del proyecto |  | 5d | 2016-11-17 A | 2016-11-23 A | 34 | 100% |  |  | 2016-11-17 | 2016-11-23 | 5d |  | start no earlier than 2016-11-17 | Emilio; Sergio | 80h | 80h | 800 | 800 | 800 |
| 36 | 2.21 | Documentar las pruebas de la API RestFull, Pruebas de Seguridad, de carga y rendimiento. |  | 5d | 2016-11-24 A | 2016-11-30 A | 35 | 100% |  |  | 2016-11-24 | 2016-11-30 | 5d |  | finish no earlier than 2016-10-03 | Sergio; Emilio | 80h | 80h | 800 | 800 | 800 |
| 37 | 2.22 | Aplicar el modelo EVA en Project |  | 5d | 2016-11-17 A | 2016-11-23 A | 34 | 100% |  |  | 2016-11-17 | 2016-11-23 | 5d |  | start no earlier than 2016-11-17 | Jose | 40h | 40h | 400 | 400 | 400 |
| 38 | 2.23 | Realizar Storyboard del Video del Logo |  | 5d | 2016-11-24 A | 2016-11-30 A | 37 | 100% |  |  | 2016-11-24 | 2016-11-30 | 5d |  |  | Jose | 40h | 40h | 400 | 400 | 400 |
| 39 | 2.24 | Buscar informacion de repositorios |  | 3d | 2016-11-17 A | 2016-11-21 A | 34 | 100% |  |  | 2016-11-17 | 2016-11-21 | 3d |  | start no earlier than 2016-11-17 | Pablo | 24h | 24h | 240 | 240 | 240 |
| 40 | 2.25 | Enlazar repositorios |  | 5d | 2016-11-22 A | 2016-11-28 A | 39 | 100% |  |  | 2016-11-22 | 2016-11-28 | 5d |  |  | Pablo | 40h | 40h | 400 | 400 | 400 |
| 41 | 2.26 | Confeccionar de Preguntas |  | 2d | 2016-11-29 A | 2016-11-30 A | 40 | 100% |  |  | 2016-11-29 | 2016-11-30 | 2d |  |  | Pablo | 16h | 16h | 160 | 160 | 160 |
| 42 | 2.27 | Confeccionar Informes de iteración e informe resumen de Hito 1 |  | 1d | 2016-11-30 A | 2016-11-30 A |  | 100% |  |  | 2016-11-30 | 2016-11-30 | 1d |  | start no earlier than 2016-11-30 | Chema [50%] | 4h | 4h | 40 | 40 | 40 |
| 43 | 2.28 | Realizar Informes presenciales de seguimiento |  | 1d | 2016-11-30 A | 2016-11-30 A |  | 100% |  |  | 2016-11-30 | 2016-11-30 | 1d |  | start no earlier than 2016-11-30 | Chema [50%] | 4h | 4h | 40 | 40 | 40 |
| 44 | 2.29 | 3º Iteración 30 de Noviembre | milestone | 0d | 2016-11-30 | 2016-11-30 |  |  |  |  | 2016-11-30 | 2016-11-30 |  | 128d | start no earlier than 2016-11-30 |  |  |  |  |  |  |
| 45 | 2.30 | Validar del funcionamiento del Backend del Proyecto |  | 2d | 2016-12-01 A | 2016-12-02 A | 44 | 100% |  |  | 2016-12-01 | 2016-12-02 | 2d |  | start no earlier than 2016-12-01 | Chema | 16h | 16h | 160 | 160 | 160 |
| 46 | 2.31 | Formación WebGL |  | 2d | 2016-12-01 A | 2016-12-02 A | 44 | 100% |  |  | 2016-12-01 | 2016-12-02 | 2d |  | start no earlier than 2016-12-01 | Emilio [50%]; Sergio [50%]; Pablo [50%] | 24h | 24h | 240 | 240 | 240 |
| 47 | 2.32 | Visualizador OpenGL 4.X simple, con datos por programa. Shader básico. |  | 2d | 2016-12-05 A | 2016-12-06 A | 45, 46 | 100% |  |  | 2016-12-05 | 2016-12-06 | 2d |  | start no earlier than 2016-12-01 | Emilio [50%]; Sergio [50%]; Pablo [50%] | 24h | 24h | 240 | 240 | 240 |
| 48 | 2.33 | Gestor de recursos: Parser de objetos en multiples formatos, salida en modo texto |  | 2d | 2016-12-07 A | 2016-12-08 A | 47 | 100% |  |  | 2016-12-07 | 2016-12-08 | 2d |  |  | Emilio [50%]; Pablo [50%]; Sergio [50%] | 24h | 24h | 240 | 240 | 240 |
| 49 | 2.34 | Visualizador OpenGL 4.X simple, con datos por fichero. Shader básico. |  | 2d | 2016-12-09 A | 2016-12-12 A | 48 | 100% |  |  | 2016-12-09 | 2016-12-12 | 2d |  |  | Emilio [50%]; Pablo [50%]; Sergio [50%] | 24h | 24h | 240 | 240 | 240 |
| 50 | 2.35 | Programar Web Cursos |  | 4d | 2016-12-07 A | 2016-12-12 A | 47 | 100% |  |  | 2016-12-07 | 2016-12-12 | 4d |  | start no earlier than 2016-12-07 | Emilio [50%]; Sergio [50%] | 32h | 32h | 320 | 320 | 320 |
| 51 | 2.36 | Formación After Effects |  | 2d | 2016-12-01 A | 2016-12-02 A | 44 | 100% |  |  | 2016-12-01 | 2016-12-02 | 2d |  | start no earlier than 2016-12-01 | Jose | 16h | 16h | 160 | 160 | 160 |
| 52 | 2.37 | Diseñar Idea del Video |  | 3d | 2016-12-05 A | 2016-12-07 A | 51 | 100% |  |  | 2016-12-05 | 2016-12-07 | 3d |  | start no earlier than 2016-12-02 | Jose | 24h | 24h | 240 | 240 | 240 |
| 53 | 2.38 | Detallar plan iteraciones del mes de Diciembre. Creación Subtareas y precedencias en Project |  | 1d | 2016-12-08 A | 2016-12-08 A | 52 | 100% |  |  | 2016-12-08 | 2016-12-08 | 1d |  |  | Jose [50%] | 4h | 4h | 40 | 40 | 40 |
| 54 | 2.39 | Detallar plan iteraciones del mes de Diciembre. Asignar recursos a las tareas en Project. |  | 1d | 2016-12-08 A | 2016-12-08 A | 52 | 100% |  |  | 2016-12-08 | 2016-12-08 | 1d |  |  | Jose [50%] | 4h | 4h | 40 | 40 | 40 |
| 55 | 2.40 | Regristrar tiempos y % de relacion de tareas en Project |  | 1d | 2016-12-09 A | 2016-12-09 A | 54 | 100% |  |  | 2016-12-09 | 2016-12-09 | 1d |  |  | Jose | 8h | 8h | 80 | 80 | 80 |
| 56 | 2.41 | Comparar la planificacion prevista y real en Project Hito 1 |  | 2d | 2016-12-12 A | 2016-12-13 A | 55 | 100% |  |  | 2016-12-12 | 2016-12-13 | 2d |  |  | Chema; Jose | 32h | 32h | 320 | 320 | 320 |
| 57 | 2.42 | Confeccionar Informes de iteración e informe resumen de Hito 1 |  | 1d | 2016-12-14 A | 2016-12-14 A | 56 | 100% |  |  | 2016-12-14 | 2016-12-14 | 1d |  |  | Chema [50%] | 4h | 4h | 40 | 40 | 40 |
| 58 | 2.43 | Realizar Informes presenciales de seguimiento |  | 1d | 2016-12-14 A | 2016-12-14 A | 56 | 100% |  |  | 2016-12-14 | 2016-12-14 | 1d |  |  | Chema [50%] | 4h | 4h | 40 | 40 | 40 |
| 59 | 2.44 | 4º Iteración 14 de Diciembre | milestone | 0d | 2016-12-14 | 2016-12-14 |  |  |  |  | 2016-12-14 | 2016-12-14 |  | 118d | start no earlier than 2016-12-14 |  |  |  |  |  |  |
| 60 | 2.45 | Elaborar la presentación del Hito 1 |  | 2d | 2016-12-15 A | 2016-12-16 A | 59 | 100% |  |  | 2016-12-15 | 2016-12-16 | 2d |  | start no earlier than 2016-12-15 |  |  |  |  |  |  |
| 61 | 2.46 | Diseñar Tutorial |  | 3d | 2016-12-19 A | 2016-12-21 A | 60 | 100% |  |  | 2016-12-19 | 2016-12-21 | 3d |  |  | Emilio; Pablo; Sergio | 72h | 72h | 720 | 720 | 720 |
| 62 | 2.47 | Hacer Vídeo con animación del logo de la empresa |  | 5d | 2016-12-15 A | 2016-12-21 A | 59 | 100% |  |  | 2016-12-15 | 2016-12-21 | 5d |  | start no earlier than 2016-12-15 | Jose | 40h | 40h | 400 | 400 | 400 |
| 63 | 2.48 | Contextualizar el modelo de datos en las especificaciones del proyecto. |  | 4d | 2016-12-15 A | 2016-12-20 A | 59 | 100% |  |  | 2016-12-15 | 2016-12-20 | 4d |  | start no earlier than 2016-12-15 | Chema | 32h | 32h | 320 | 320 | 320 |
| 64 | 2.49 | Definir métricas e indicadores del proyecto. En el contexto indicado se definen los indicadores principales del proyecto. |  | 2d | 2016-12-21 A | 2016-12-22 A | 63 | 100% |  |  | 2016-12-21 | 2016-12-22 | 2d |  |  | Chema | 16h | 16h | 160 | 160 | 160 |
| 65 | 2.50 | Testeo Final del Hito1 |  | 2d | 2016-12-22 A | 2016-12-23 A | 61 | 100% |  |  | 2016-12-22 | 2016-12-23 | 2d |  |  | Emilio [90%]; Pablo [90%]; Sergio [90%] | 43.2h | 43.2h | 432 | 432 | 432 |
| 66 | 2.51 | Exponer la presentación del Hito 1 |  | 1d? | 2016-12-23 A | 2016-12-23 A |  | 100% |  |  | 2016-12-23 | 2016-12-23 | 1d? |  | start no earlier than 2016-12-23 | Emilio [10%]; Jose [70%]; Pablo [10%]; Sergio [10%] | 8h | 8h | 80 | 80 | 80 |
| 67 | 2.52 | Confeccionar Informes de iteración e informe resumen de Hito 1 |  | 1d? | 2016-12-23 A | 2016-12-23 A |  | 100% |  |  | 2016-12-23 | 2016-12-23 | 1d? |  | start no earlier than 2016-12-23 | Chema | 8h | 8h | 80 | 80 | 80 |
| 68 | 2.53 | 5º Iteración 23 de Diciembre | milestone | 0d | 2016-12-23 | 2016-12-23 |  |  |  |  | 2016-12-23 | 2016-12-23 |  | 111d | start no earlier than 2016-12-23 |  |  |  |  |  |  |

Notes:
- 23: Esta tarea la parte de la implementación la tenemos terminada, pero la documentación nos han ampliado el plazo de entrega, asi que no se completara hasta final de año.
- 36: Esta tarea la parte de la implementación la tenemos terminada, pero la documentación nos han ampliado el plazo de entrega, asi que no se completara hasta final de año.
- 46: Al ser formación y no haber tocado nunca WebGL y faltar una tarea por realizar consideramos que continuaremos formandonos hasta terminarla.

| ID | WBS | Task | Duration | Start | Finish | Predecessors | Complete | Remaining | Actual finish | Baseline start | Baseline finish | Baseline duration | Constraint | Resources | Work | Actual work | Cost | Baseline cost | Actual cost |
| --- | --- | --- | --- | --- | --- | --- | --- | --- | --- | --- | --- | --- | --- | --- | --- | --- | --- | --- | --- |
| 69 | 3 | **Hito 2** | 27d | 2016-12-23 A | 2017-01-30 |  | 100% |  | 2017-01-23 | 2016-12-23 | 2017-01-30 | 27d |  |  | 593.6h | 593.6h | 5,936 | 5,936 | 5,936 |
| 70 | 3.1 | Revisar especificación proyecto. | 1d | 2016-12-23 A | 2016-12-23 A |  | 100% |  |  | 2016-12-23 | 2016-12-23 | 1d |  | Jose [50%] | 4h | 4h | 40 | 40 | 40 |
| 71 | 3.2 | Reestimar proyecto. | 1d | 2016-12-23 A | 2016-12-23 A |  | 100% |  |  | 2016-12-23 | 2016-12-23 | 1d |  | Jose [50%] | 4h | 4h | 40 | 40 | 40 |
| 72 | 3.3 | Detallar plan iteraciones del mes de Enero. Creación Subtareas y precedencias en Project | 1d | 2016-12-26 A | 2016-12-26 A | 70, 71 | 100% |  |  | 2016-12-26 | 2016-12-26 | 1d |  | Jose [35%] | 2.8h | 2.8h | 28 | 28 | 28 |
| 73 | 3.4 | Detallar plan Iteraciones del mes de Enero. Asignar recursos a las tareas en Project. | 1d | 2016-12-26 A | 2016-12-26 A | 70, 71 | 100% |  |  | 2016-12-26 | 2016-12-26 | 1d |  | Jose [35%] | 2.8h | 2.8h | 28 | 28 | 28 |
| 74 | 3.5 | Registrar de tiempos y % de realización de tareas en Project | 1d | 2016-12-26 A | 2016-12-26 A | 70, 71 | 100% |  |  | 2016-12-26 | 2016-12-26 | 1d |  | Jose [30%] | 2.4h | 2.4h | 24 | 24 | 24 |
| 75 | 3.6 | Diseñar Mockup Cartel | 2d | 2016-12-27 A | 2016-12-28 A | 72, 73, 74 | 100% |  |  | 2016-12-27 | 2016-12-28 | 2d |  | Jose [50%] | 8h | 8h | 80 | 80 | 80 |
| 76 | 3.7 | Desarrollar idea Cartel | 2d | 2016-12-27 A | 2016-12-28 A | 72, 73, 74 | 100% |  |  | 2016-12-27 | 2016-12-28 | 2d |  | Jose [50%] | 8h | 8h | 80 | 80 | 80 |
| 77 | 3.8 | Vacaciones de Navidad | 3d | 2016-12-29 A | 2017-01-02 A | 76, 75 | 100% |  |  | 2016-12-29 | 2017-01-02 | 3d |  | Chema; Emilio; Jose; Pablo; Sergio | 120h | 120h | 1,200 | 1,200 | 1,200 |
| 78 | 3.9 | Documentar la relación entre back-end y front-end (detalle desde dónde se llama a la API en el front-end). - Integrar Front-Back. | 2d | 2017-01-03 A | 2017-01-04 A | 77 | 100% |  |  | 2017-01-03 | 2017-01-04 | 2d |  | Emilio | 16h | 16h | 160 | 160 | 160 |
| 79 | 3.10 | Añadir API´s de redes sociales | 1d | 2017-01-05 A | 2017-01-05 A | 78 | 100% |  |  | 2017-01-05 | 2017-01-05 | 1d |  | Emilio | 8h | 8h | 80 | 80 | 80 |
| 80 | 3.11 | Documentar sobre toma de decisión, versiones, codificación, internacionalización (varias lenguas), instalación sobre servidor de frameworks… - Arquitectura tecnológica. | 3d | 2017-01-03 A | 2017-01-05 A | 77 | 100% |  |  | 2017-01-03 | 2017-01-05 | 3d |  | Pablo | 24h | 24h | 240 | 240 | 240 |
| 81 | 3.12 | Documentar el SEO. (Definir aspectos SEO como son palabras clave, estilos de textos, posiciones de texto, como se va a potenciar esto (landing, blog, etc…), URL amigables). | 2d | 2017-01-03 A | 2017-01-04 A | 77 | 100% |  |  | 2017-01-03 | 2017-01-04 | 2d |  | Chema | 16h | 16h | 160 | 160 | 160 |
| 82 | 3.13 | Incorporar Open data, API's, y otras fuentes heterogéneas | 2d | 2017-01-05 A | 2017-01-06 A | 81 | 100% |  |  | 2017-01-05 | 2017-01-06 | 2d |  | Chema | 16h | 16h | 160 | 160 | 160 |
| 83 | 3.14 | Integrar de datos (basado en lo visto en el punto anterior de fuentes de datos) | 2d | 2017-01-09 A | 2017-01-10 A | 82 | 100% |  |  | 2017-01-09 | 2017-01-10 | 2d |  | Chema | 16h | 16h | 160 | 160 | 160 |
| 84 | 3.15 | Documentar detallandamente la imagen corporativa del servicio (colores, estilos, esencia para la experiencia de usuario, consideraciones de usabilidad y accesibliidad) | 4d | 2017-01-03 A | 2017-01-06 A | 77 | 100% |  |  | 2017-01-03 | 2017-01-06 | 4d |  | Sergio [50%]; Jose [50%] | 32h | 32h | 320 | 320 | 320 |
| 85 | 3.16 | Hacer el repositorio | 1d | 2017-01-09 A | 2017-01-09 A | 84 | 100% |  |  | 2017-01-09 | 2017-01-09 | 1d |  | Sergio | 8h | 8h | 80 | 80 | 80 |
| 86 | 3.17 | Cartel juego/proyecto | 1d | 2017-01-09 A | 2017-01-09 A | 84 | 100% |  |  | 2017-01-09 | 2017-01-09 | 1d |  | Jose | 8h | 8h | 80 | 80 | 80 |
| 87 | 3.18 | Formación Angular 2 | 9d | 2017-01-10 A | 2017-01-20 A | 85, 86 | 100% |  |  | 2017-01-10 | 2017-01-20 | 9d |  | Emilio [50%]; Jose [50%]; Pablo [50%]; Sergio [50%] | 144h | 144h | 1,440 | 1,440 | 1,440 |
| 88 | 3.19 | Formación Ionic 2 | 9d | 2017-01-10 A | 2017-01-20 A | 85, 86 | 100% |  |  | 2017-01-10 | 2017-01-20 | 9d |  | Emilio [50%]; Jose [50%]; Pablo [50%]; Sergio [50%] | 144h | 144h | 1,440 | 1,440 | 1,440 |
| 89 | 3.20 | Diseñar Web Coorporativa | 1d | 2017-01-23 A | 2017-01-23 A | 88, 87 | 100% |  |  | 2017-01-23 | 2017-01-23 | 1d |  | Emilio [30%]; Sergio [30%]; Jose [20%]; Pablo [20%] | 8h | 8h | 80 | 80 | 80 |
| 90 | 3.21 | Comprar la planificacion prevista y real en Project Hito 2 | 1d | 2017-01-23 A | 2017-01-23 A | 87, 88 | 100% |  |  | 2017-01-23 | 2017-01-23 | 1d |  | Jose [20%] | 1.6h | 1.6h | 16 | 16 | 16 |
| 91 | 4 | **Hito 3** | 47d | 2017-01-31 A | 2017-04-05 |  | 95% | 2.44d |  | 2017-01-31 | 2017-04-05 | 47d |  |  | 1544h | 1460.8h | 15,440 | 15,440 | 14,608 |
| 92 | 4.1 | **1º Iteración 12 de Febrero** | 10d | 2017-01-31 A | 2017-02-12 |  | 100% |  | 2017-02-10 | 2017-01-31 | 2017-02-12 | 10d |  |  | 328h | 328h | 3,280 | 3,280 | 3,280 |
| 93 | 4.1.1 | Detallar plan iteraciones del mes de Febrero-Marzo. Creación Subtareas y precedencias en Project | 1d | 2017-01-31 A | 2017-01-31 A |  | 100% |  |  | 2017-01-31 | 2017-01-31 | 1d |  | Jose [35%] | 2.8h | 2.8h | 28 | 28 | 28 |
| 94 | 4.1.2 | Detallar plan iteraciones del mes de Febrero-Marzo Asignar recursos a las tareas en Project. | 1d | 2017-01-31 A | 2017-01-31 A |  | 100% |  |  | 2017-01-31 | 2017-01-31 | 1d |  | Jose [35%] | 2.8h | 2.8h | 28 | 28 | 28 |
| 95 | 4.1.3 | Registrar de tiempos y % de realización de tareas en Project | 1d | 2017-01-31 A | 2017-01-31 A |  | 100% |  |  | 2017-01-31 | 2017-01-31 | 1d |  | Jose [30%] | 2.4h | 2.4h | 24 | 24 | 24 |
| 96 | 4.1.4 | Formación Ionic 2 | 3d | 2017-02-01 A | 2017-02-05 A | 93, 94, 95 | 100% |  |  | 2017-02-01 | 2017-02-05 | 3d | finish no earlier than 2017-02-05 | Chema; Emilio; Jose; Pablo; Sergio | 120h | 120h | 1,200 | 1,200 | 1,200 |
| 97 | 4.1.5 | Desplegar la infraestructura del proyecto. | 2d | 2017-02-06 A | 2017-02-07 A | 96 | 100% |  |  | 2017-02-06 | 2017-02-07 | 2d | finish no earlier than 2017-02-12 | Chema [50%] | 8h | 8h | 80 | 80 | 80 |
| 98 | 4.1.6 | Definir cuadros de mando, implementación. | 2d | 2017-02-06 A | 2017-02-07 A | 96 | 100% |  |  | 2017-02-06 | 2017-02-07 | 2d | finish no earlier than 2017-02-12 | Chema [50%] | 8h | 8h | 80 | 80 | 80 |

| ID | WBS | Task | Duration | Start | Finish | Predecessors | Complete | Actual finish | Baseline start | Baseline finish | Baseline duration | Constraint | Resources | Work | Actual work | Cost | Baseline cost | Actual cost |
| --- | --- | --- | --- | --- | --- | --- | --- | --- | --- | --- | --- | --- | --- | --- | --- | --- | --- | --- |
| 99 | 4.1.7 | **Arbol de la escena** | 3d | 2017-02-08 A | 2017-02-10 A | 97, 98 | 100% |  | 2017-02-08 | 2017-02-10 | 3d |  |  | 24h | 24h | 240 | 240 | 240 |
| 100 | 4.1.7.1 | Tipos de datos para nodos (completo) y entidades (sólo clase padre; clases hijas sin contenido), construcción del árbol, recorrido del árbol, salida en modo texto | 3d | 2017-02-08 A | 2017-02-10 A |  | 100% |  | 2017-02-08 | 2017-02-10 | 3d | start no earlier than 2017-02-13 | Chema [20%] | 4.8h | 4.8h | 48 | 48 | 48 |
| 101 | 4.1.7.2 | Tipos de datos para entidades de tipo transformacion (traslación, rotación y escalado relativos y absolutos. Otras transformaciones). Salida en modo texto | 3d | 2017-02-08 A | 2017-02-10 A |  | 100% |  | 2017-02-08 | 2017-02-10 | 3d | start no earlier than 2017-02-13 | Chema [20%] | 4.8h | 4.8h | 48 | 48 | 48 |
| 102 | 4.1.7.3 | Tipos de datos para entidades de tipo cámara y luz (cámaras y luces de dos tipos). Salida en modo texto | 3d | 2017-02-08 A | 2017-02-10 A |  | 100% |  | 2017-02-08 | 2017-02-10 | 3d | start no earlier than 2017-02-13 | Chema [20%] | 4.8h | 4.8h | 48 | 48 | 48 |
| 103 | 4.1.7.4 | Tipos de datos para entidades de tipo malla. Salida en modo texto | 3d | 2017-02-08 A | 2017-02-10 A |  | 100% |  | 2017-02-08 | 2017-02-10 | 3d | start no earlier than 2017-02-13 | Chema [20%] | 4.8h | 4.8h | 48 | 48 | 48 |
| 104 | 4.1.7.5 | Tipos de datos para entidades de tipo animación (cuadro a cuadro). Salida en modo texto | 3d | 2017-02-08 A | 2017-02-10 A |  | 100% |  | 2017-02-08 | 2017-02-10 | 3d | start no earlier than 2017-02-13 | Chema [20%] | 4.8h | 4.8h | 48 | 48 | 48 |
| 105 | 4.1.8 | **Implementar Front-end App móvil** | 5d | 2017-02-06 A | 2017-02-10 A | 96 | 100% |  | 2017-02-06 | 2017-02-10 | 5d |  |  | 160h | 160h | 1,600 | 1,600 | 1,600 |
| 106 | 4.1.8.1 | Tutorial | 5d | 2017-02-06 A | 2017-02-10 A |  | 100% |  | 2017-02-06 | 2017-02-10 | 5d | finish no earlier than 2017-02-12 | Jose | 40h | 40h | 400 | 400 | 400 |
| 107 | 4.1.8.2 | Login | 5d | 2017-02-06 A | 2017-02-10 A |  | 100% |  | 2017-02-06 | 2017-02-10 | 5d | finish no earlier than 2017-02-12 | Emilio | 40h | 40h | 400 | 400 | 400 |
| 108 | 4.1.8.3 | Registro | 5d | 2017-02-06 A | 2017-02-10 A |  | 100% |  | 2017-02-06 | 2017-02-10 | 5d | finish no earlier than 2017-02-12 | Pablo [25%] | 10h | 10h | 100 | 100 | 100 |
| 109 | 4.1.8.4 | Perfil | 5d | 2017-02-06 A | 2017-02-10 A |  | 100% |  | 2017-02-06 | 2017-02-10 | 5d | finish no earlier than 2017-02-12 | Pablo [25%] | 10h | 10h | 100 | 100 | 100 |
| 110 | 4.1.8.5 | Recuperar Contraseña | 5d | 2017-02-06 A | 2017-02-10 A |  | 100% |  | 2017-02-06 | 2017-02-10 | 5d | finish no earlier than 2017-02-12 | Pablo [50%] | 20h | 20h | 200 | 200 | 200 |
| 111 | 4.1.8.6 | Lector QR y Cod Barras | 5d | 2017-02-06 A | 2017-02-10 A |  | 100% |  | 2017-02-06 | 2017-02-10 | 5d | finish no earlier than 2017-02-12 | Sergio [50%] | 20h | 20h | 200 | 200 | 200 |
| 112 | 4.1.8.7 | Retoques de Diseño | 5d | 2017-02-06 A | 2017-02-10 A |  | 100% |  | 2017-02-06 | 2017-02-10 | 5d | finish no earlier than 2017-02-12 | Sergio [50%] | 20h | 20h | 200 | 200 | 200 |
| 113 | 4.2 | **2º Iteración 26 de Febrero** | 11d | 2017-02-13 A | 2017-02-26 |  | 100% | 2017-02-24 | 2017-02-13 | 2017-02-26 | 11d |  |  | 360h | 360h | 3,600 | 3,600 | 3,600 |
| 114 | 4.2.1 | **Implementar Front-end App móvil** | 5d | 2017-02-13 A | 2017-02-17 A | 105 | 100% |  | 2017-02-13 | 2017-02-17 | 5d |  |  | 160h | 160h | 1,600 | 1,600 | 1,600 |
| 115 | 4.2.1.1 | Carrito | 5d | 2017-02-13 A | 2017-02-17 A |  | 100% |  | 2017-02-13 | 2017-02-17 | 5d | finish no earlier than 2017-02-17 | Emilio [50%] | 20h | 20h | 200 | 200 | 200 |
| 116 | 4.2.1.2 | Pago TPV | 5d | 2017-02-13 A | 2017-02-17 A |  | 100% |  | 2017-02-13 | 2017-02-17 | 5d | finish no earlier than 2017-02-17 | Emilio [50%] | 20h | 20h | 200 | 200 | 200 |
| 117 | 4.2.1.3 | Mis Facturas | 5d | 2017-02-13 A | 2017-02-17 A |  | 100% |  | 2017-02-13 | 2017-02-17 | 5d | finish no earlier than 2017-02-17 | Jose [50%] | 20h | 20h | 200 | 200 | 200 |
| 118 | 4.2.1.4 | Detalle Facturas | 5d | 2017-02-13 A | 2017-02-17 A |  | 100% |  | 2017-02-13 | 2017-02-17 | 5d | finish no earlier than 2017-02-17 | Jose [50%] | 20h | 20h | 200 | 200 | 200 |
| 119 | 4.2.1.5 | Contacto | 5d | 2017-02-13 A | 2017-02-17 A |  | 100% |  | 2017-02-13 | 2017-02-17 | 5d | finish no earlier than 2017-02-17 | Pablo [50%] | 20h | 20h | 200 | 200 | 200 |
| 120 | 4.2.1.6 | Ver Tiendas | 5d | 2017-02-13 A | 2017-02-17 A |  | 100% |  | 2017-02-13 | 2017-02-17 | 5d | finish no earlier than 2017-02-17 | Pablo [50%] | 20h | 20h | 200 | 200 | 200 |
| 121 | 4.2.1.7 | Ofertas | 5d | 2017-02-13 A | 2017-02-17 A |  | 100% |  | 2017-02-13 | 2017-02-17 | 5d | finish no earlier than 2017-02-17 | Sergio [25%] | 10h | 10h | 100 | 100 | 100 |
| 122 | 4.2.1.8 | Detalle Producto | 5d | 2017-02-13 A | 2017-02-17 A |  | 100% |  | 2017-02-13 | 2017-02-17 | 5d | finish no earlier than 2017-02-17 | Sergio [25%] | 10h | 10h | 100 | 100 | 100 |
| 123 | 4.2.1.9 | Retoques de Diseño | 5d | 2017-02-13 A | 2017-02-17 A |  | 100% |  | 2017-02-13 | 2017-02-17 | 5d | finish no earlier than 2017-02-17 | Sergio [50%] | 20h | 20h | 200 | 200 | 200 |

| ID | WBS | Task | Duration | Start | Finish | Predecessors | Complete | Actual finish | Baseline start | Baseline finish | Baseline duration | Constraint | Resources | Work | Actual work | Cost | Baseline cost | Actual cost |
| --- | --- | --- | --- | --- | --- | --- | --- | --- | --- | --- | --- | --- | --- | --- | --- | --- | --- | --- |
| 124 | 4.2.2 | **Gestor de recursos** | 3d | 2017-02-13 A | 2017-02-15 A | 99 | 100% |  | 2017-02-13 | 2017-02-15 | 3d |  |  | 24h | 24h | 240 | 240 | 240 |
| 125 | 4.2.2.1 | Carga de modelos en formato múltiple en las entidades de tipo malla. Carga de varios ficheros para animación. Salida en modo texto | 3d | 2017-02-13 A | 2017-02-15 A |  | 100% |  | 2017-02-13 | 2017-02-15 | 3d | start no earlier than 2017-02-13 | Chema [50%] | 12h | 12h | 120 | 120 | 120 |
| 126 | 4.2.2.2 | Carga de materiales y texturas. Salida en modo texto | 3d | 2017-02-13 A | 2017-02-15 A |  | 100% |  | 2017-02-13 | 2017-02-15 | 3d | start no earlier than 2017-02-13 | Chema [50%] | 12h | 12h | 120 | 120 | 120 |
| 127 | 4.2.3 | Documentar Front-end de las interfaces móvil (Mockups-Interfaz Final) | 1d | 2017-02-16 A | 2017-02-16 A | 124 | 100% |  | 2017-02-16 | 2017-02-16 | 1d |  | Chema | 8h | 8h | 80 | 80 | 80 |
| 128 | 4.2.4 | Definición de KPI's implementación. | 3d | 2017-02-17 A | 2017-02-21 A | 127 | 100% |  | 2017-02-17 | 2017-02-21 | 3d | finish no earlier than 2017-02-26 | Chema [50%] | 12h | 12h | 120 | 120 | 120 |
| 129 | 4.2.5 | Valorar cuadro de mando y KPI's definidos e incorporación de nuevos elementos según datos | 3d | 2017-02-17 A | 2017-02-21 A | 127 | 100% |  | 2017-02-17 | 2017-02-21 | 3d | finish no earlier than 2017-02-26 | Chema [50%] | 12h | 12h | 120 | 120 | 120 |
| 130 | 4.2.6 | **Visualizador WebGL de las entidades tipo malla. Shader básico.** | 3d | 2017-02-22 A | 2017-02-24 A | 128, 129 | 100% |  | 2017-02-22 | 2017-02-24 | 3d |  |  | 24h | 24h | 240 | 240 | 240 |
| 131 | 4.2.6.1 | Integración con el motor. Sin materiales, texturas, cámara ni luces | 3d | 2017-02-22 A | 2017-02-24 A |  | 100% |  | 2017-02-22 | 2017-02-24 | 3d | finish no earlier than 2017-02-24 | Chema [40%] | 9.6h | 9.6h | 96 | 96 | 96 |
| 132 | 4.2.6.2 | Con cámaras y luces de varios tipos. Visualización con registro de cámaras y luces. | 3d | 2017-02-22 A | 2017-02-24 A |  | 100% |  | 2017-02-22 | 2017-02-24 | 3d | finish no earlier than 2017-02-24 | Chema [30%] | 7.2h | 7.2h | 72 | 72 | 72 |
| 133 | 4.2.6.3 | Añadiendo materiales y texturas. | 3d | 2017-02-22 A | 2017-02-24 A |  | 100% |  | 2017-02-22 | 2017-02-24 | 3d | finish no earlier than 2017-02-24 | Chema [30%] | 7.2h | 7.2h | 72 | 72 | 72 |
| 134 | 4.2.7 | **Implementar Front-end App CMS** | 5d | 2017-02-20 A | 2017-02-24 A | 114 | 100% |  | 2017-02-20 | 2017-02-24 | 5d |  |  | 80h | 80h | 800 | 800 | 800 |
| 135 | 4.2.7.1 | Login | 5d | 2017-02-20 A | 2017-02-24 A |  | 100% |  | 2017-02-20 | 2017-02-24 | 5d | start no earlier than 2017-02-20 | Emilio [50%] | 20h | 20h | 200 | 200 | 200 |
| 136 | 4.2.7.2 | Home | 5d | 2017-02-20 A | 2017-02-24 A |  | 100% |  | 2017-02-20 | 2017-02-24 | 5d | start no earlier than 2017-02-20 | Emilio [50%] | 20h | 20h | 200 | 200 | 200 |
| 137 | 4.2.7.3 | Perfil Administrador | 5d | 2017-02-20 A | 2017-02-24 A |  | 100% |  | 2017-02-20 | 2017-02-24 | 5d | start no earlier than 2017-02-20 | Jose [50%] | 20h | 20h | 200 | 200 | 200 |
| 138 | 4.2.7.4 | Cliente | 5d | 2017-02-20 A | 2017-02-24 A |  | 100% |  | 2017-02-20 | 2017-02-24 | 5d | start no earlier than 2017-02-20 | Jose [25%] | 10h | 10h | 100 | 100 | 100 |
| 139 | 4.2.7.5 | Detalle Cliente | 5d | 2017-02-20 A | 2017-02-24 A |  | 100% |  | 2017-02-20 | 2017-02-24 | 5d | start no earlier than 2017-02-20 | Jose [25%] | 10h | 10h | 100 | 100 | 100 |
| 140 | 4.2.8 | Enlazar Front-Back App Móvil | 5d | 2017-02-20 A | 2017-02-24 A | 114 | 100% |  | 2017-02-20 | 2017-02-24 | 5d | start no earlier than 2017-02-20 | Pablo [50%]; Sergio [50%] | 40h | 40h | 400 | 400 | 400 |
| 141 | 4.3 | **3º Iteración 12 de Marzo** | 11d | 2017-02-27 A | 2017-03-12 |  | 100% | 2017-03-10 | 2017-02-27 | 2017-03-12 | 11d |  |  | 320h | 320h | 3,200 | 3,200 | 3,200 |
| 142 | 4.3.1 | **Visualizador WebGL de las entidades tipo malla. Shader básico.** | 6d | 2017-02-27 A | 2017-03-06 A | 130 | 100% |  | 2017-02-27 | 2017-03-06 | 6d |  |  | 48h | 48h | 480 | 480 | 480 |
| 143 | 4.3.1.1 | Integración con el motor. Sin materiales, texturas, cámara ni luces | 6d | 2017-02-27 A | 2017-03-06 A |  | 100% |  | 2017-02-27 | 2017-03-06 | 6d | finish no earlier than 2017-02-24 | Chema [40%] | 19.2h | 19.2h | 192 | 192 | 192 |
| 144 | 4.3.1.2 | Con cámaras y luces de varios tipos. Visualización con registro de cámaras y luces. | 6d | 2017-02-27 A | 2017-03-06 A |  | 100% |  | 2017-02-27 | 2017-03-06 | 6d | finish no earlier than 2017-02-24 | Chema [40%] | 19.2h | 19.2h | 192 | 192 | 192 |
| 145 | 4.3.1.3 | Añadiendo materiales y texturas. | 6d | 2017-02-27 A | 2017-03-06 A |  | 100% |  | 2017-02-27 | 2017-03-06 | 6d | finish no earlier than 2017-02-24 | Chema [20%] | 9.6h | 9.6h | 96 | 96 | 96 |
| 146 | 4.3.2 | **Implementar Front-end App CMS** | 8d | 2017-02-27 A | 2017-03-08 A | 134 | 100% |  | 2017-02-27 | 2017-03-08 | 8d |  |  | 128h | 128h | 1,280 | 1,280 | 1,280 |
| 147 | 4.3.2.1 | Productos | 8d | 2017-02-27 A | 2017-03-08 A |  | 100% |  | 2017-02-27 | 2017-03-08 | 8d | start no earlier than 2017-02-27 | Emilio [50%] | 32h | 32h | 320 | 320 | 320 |
| 148 | 4.3.2.2 | Detalle Producto | 8d | 2017-02-27 A | 2017-03-08 A |  | 100% |  | 2017-02-27 | 2017-03-08 | 8d | start no earlier than 2017-02-27 | Emilio [50%] | 32h | 32h | 320 | 320 | 320 |
| 149 | 4.3.2.3 | Facturas | 8d | 2017-02-27 A | 2017-03-08 A |  | 100% |  | 2017-02-27 | 2017-03-08 | 8d | start no earlier than 2017-02-27 | Jose [50%] | 32h | 32h | 320 | 320 | 320 |
| 150 | 4.3.2.4 | Detalle Facturas | 8d | 2017-02-27 A | 2017-03-08 A |  | 100% |  | 2017-02-27 | 2017-03-08 | 8d | finish no earlier than 2017-03-08 | Jose [25%] | 16h | 16h | 160 | 160 | 160 |
| 151 | 4.3.2.5 | Ofertas | 8d | 2017-02-27 A | 2017-03-08 A |  | 100% |  | 2017-02-27 | 2017-03-08 | 8d | start no earlier than 2017-02-27 | Jose [25%] | 16h | 16h | 160 | 160 | 160 |
| 152 | 4.3.3 | Enlazar Front-Back App Móvil | 8d | 2017-02-27 A | 2017-03-08 A | 140 | 100% |  | 2017-02-27 | 2017-03-08 | 8d | finish no earlier than 2017-03-08 | Pablo [50%]; Sergio [50%] | 64h | 64h | 640 | 640 | 640 |
| 153 | 4.3.4 | Definición de KPI's implementación. | 3d | 2017-03-07 A | 2017-03-09 A | 142 | 100% |  | 2017-03-07 | 2017-03-09 | 3d | start no earlier than 2017-02-27 | Chema [50%] | 12h | 12h | 120 | 120 | 120 |
| 154 | 4.3.5 | Valorar cuadro de mando y KPI's definidos e incorporación de nuevos elementos según datos | 3d | 2017-03-07 A | 2017-03-09 A | 142 | 100% |  | 2017-03-07 | 2017-03-09 | 3d | start no earlier than 2017-02-27 | Chema [50%] | 12h | 12h | 120 | 120 | 120 |
| 155 | 4.3.6 | Documentar Front-end de las interfaces CMS (Mockups-Interfaz Final) | 1d | 2017-03-10 A | 2017-03-10 A | 153, 154 | 100% |  | 2017-03-10 | 2017-03-10 | 1d | finish no earlier than 2017-03-10 | Chema | 8h | 8h | 80 | 80 | 80 |
| 156 | 4.3.7 | Enlazar Front-Back de las Apps | 2d | 2017-03-09 A | 2017-03-10 A | 146 | 100% |  | 2017-03-09 | 2017-03-10 | 2d | finish no earlier than 2017-03-10 | Emilio; Pablo; Sergio; Jose | 48h | 48h | 480 | 480 | 480 |

| ID | WBS | Task | Duration | Start | Finish | Predecessors | Complete | Remaining | Actual finish | Baseline start | Baseline finish | Baseline duration | Total slack | Free slack | Constraint | Resources | Work | Actual work | Cost | Baseline cost | Actual cost |
| --- | --- | --- | --- | --- | --- | --- | --- | --- | --- | --- | --- | --- | --- | --- | --- | --- | --- | --- | --- | --- | --- |
| 157 | 4.4 | **4º Iteración 26 de Marzo** | 11d | 2017-03-13 A | 2017-03-26 |  | 100% |  | 2017-03-24 | 2017-03-13 | 2017-03-26 | 11d |  |  |  |  | 320h | 320h | 3,200 | 3,200 | 3,200 |
| 158 | 4.4.1 | Enlazar Front-Back del CMS | 10d | 2017-03-13 A | 2017-03-24 A | 156 | 100% |  |  | 2017-03-13 | 2017-03-24 | 10d |  |  | finish no earlier than 2017-03-24 | Emilio; Jose [75%] | 140h | 140h | 1,400 | 1,400 | 1,400 |
| 159 | 4.4.2 | Enlazar Front-Back App Móvil | 10d | 2017-03-13 A | 2017-03-24 A | 156 | 100% |  |  | 2017-03-13 | 2017-03-24 | 10d |  |  |  | Sergio | 80h | 80h | 800 | 800 | 800 |
| 160 | 4.4.3 | Rematar tareas pendientes de TAG | 10d | 2017-03-13 A | 2017-03-24 A | 142 | 100% |  |  | 2017-03-13 | 2017-03-24 | 10d |  |  |  | Pablo | 80h | 80h | 800 | 800 | 800 |
| 161 | 4.4.4 | Confeccionar Tutorial | 10d | 2017-03-13 A | 2017-03-24 A |  | 100% |  |  | 2017-03-13 | 2017-03-24 | 10d |  |  | start no earlier than 2017-03-13 | Jose [25%] | 20h | 20h | 200 | 200 | 200 |
| 162 | 4.5 | **5º Iteración 5 de Abril** | 8d | 2017-03-27 A | 2017-04-05 |  | 56% | 3.56d |  | 2017-03-27 | 2017-04-05 | 8d |  |  |  |  | 216h | 132.8h | 2,160 | 2,160 | 1,328 |
| 163 | 4.5.1 | Enlazar Front-Back del CMS | 5d | 2017-03-27 A | 2017-03-31 A | 158 | 100% |  |  | 2017-03-27 | 2017-03-31 | 5d |  |  |  | Emilio | 40h | 40h | 400 | 400 | 400 |
| 164 | 4.5.2 | Enlazar Front-Back App Móvil | 5d | 2017-03-27 A | 2017-03-31 A | 159 | 100% |  |  | 2017-03-27 | 2017-03-31 | 5d |  |  |  | Sergio | 40h | 40h | 400 | 400 | 400 |
| 165 | 4.5.3 | Fachada: Crear de una fachada entre el motor y la aplicación. | 8d | 2017-03-27 A | 2017-04-05 A | 160 | 100% |  |  | 2017-03-27 | 2017-04-05 | 8d |  |  |  | Pablo [35%]; Chema [35%] | 44.8h | 44.8h | 448 | 448 | 448 |
| 166 | 4.5.4 | Visualizador OpenGL 4.X con cuatro shaders avanzados | 8d | 2017-03-27 | 2017-04-05 | 160 |  |  |  | 2017-03-27 | 2017-04-05 | 8d | 12d | 7d |  | Pablo [35%]; Chema [35%] | 44.8h |  | 448 | 448 |  |
| 167 | 4.5.5 | IGC: Aplicación: cargador de modelos, movimiento del modelo, de las luces y de la cámara. Cambio de modelo, materiales y texturas. Animaciones. Integración con el motor; ICED: Integración con el videojuego, sustitución de Irrlicht por el motor propio | 8d | 2017-03-27 | 2017-04-05 | 160 |  |  |  | 2017-03-27 | 2017-04-05 | 8d | 12d | 7d |  | Pablo [30%]; Chema [30%] | 38.4h |  | 384 | 384 |  |
| 168 | 4.5.6 | Comparar la planificación prevista y real en Project hito 3. | 1d | 2017-04-04 A | 2017-04-04 A |  | 100% |  |  | 2017-04-04 | 2017-04-04 | 1d |  |  | start no earlier than 2017-04-04 | Jose [50%] | 4h | 4h | 40 | 40 | 40 |
| 169 | 4.5.7 | Confeccionar Informes de iteración e informe resumen Hito 3 | 1d | 2017-04-04 A | 2017-04-04 A |  | 100% |  |  | 2017-04-04 | 2017-04-04 | 1d |  |  | start no earlier than 2017-04-04 | Jose [50%] | 4h | 4h | 40 | 40 | 40 |
| 170 | 5 | **Hito 4** | 37d | 2017-04-06 A | 2017-05-26 |  | 10% | 33.41d |  | 2017-04-06 | 2017-05-26 | 37d |  |  |  |  | 645.6h | 109.6h | 6,456 | 6,456 | 1,096 |
| 171 | 5.1 | Elaborar la presentación del Hito 3 | 1d | 2017-04-10 A | 2017-04-10 A |  | 100% |  |  | 2017-04-10 | 2017-04-10 | 1d |  |  | start no earlier than 2017-04-10 | Chema; Emilio; Jose; Pablo; Sergio | 40h | 40h | 400 | 400 | 400 |
| 172 | 5.2 | Realizar Storyboard del Video promocional | 2d | 2017-04-11 A | 2017-04-12 A |  | 100% |  |  | 2017-04-11 | 2017-04-12 | 2d |  |  | start no earlier than 2017-04-11 | Jose [30%] | 4.8h | 4.8h | 48 | 48 | 48 |
| 173 | 5.3 | Desarrollo idea Trailer | 3d | 2017-04-13 A | 2017-04-17 A | 172 | 100% |  |  | 2017-04-13 | 2017-04-17 | 3d |  |  | start no earlier than 2017-04-11 | Jose [30%] | 7.2h | 7.2h | 72 | 72 | 72 |
| 174 | 5.4 | Tráiler juego/proyecto | 3d | 2017-04-13 A | 2017-04-17 A | 172 | 100% |  |  | 2017-04-13 | 2017-04-17 | 3d |  |  | start no earlier than 2017-04-11 | Jose [40%] | 9.6h | 9.6h | 96 | 96 | 96 |
| 175 | 5.5 | Testeo de Web | 4d | 2017-04-18 A | 2017-04-21 A | 161 | 100% |  |  | 2017-04-18 | 2017-04-21 | 4d |  |  | start no earlier than 2017-04-18 | Jose | 32h | 32h | 320 | 320 | 320 |
| 176 | 5.6 | Subida de Web | 1d | 2017-04-24 A | 2017-04-24 A | 175 | 100% |  |  | 2017-04-24 | 2017-04-24 | 1d |  |  |  | Jose | 8h | 8h | 80 | 80 | 80 |
| 177 | 5.7 | Detallar plan iteraciones del mes de Abril-Mayo. Creación Subtareas y precedencias en Project | 1d | 2017-04-25 A | 2017-04-25 A | 171 | 100% |  |  | 2017-04-25 | 2017-04-25 | 1d |  |  | start no earlier than 2017-04-25 | Jose [30%] | 2.4h | 2.4h | 24 | 24 | 24 |
| 178 | 5.8 | Detallar plan iteraciones del mes de Abril-Mayo. Asignar recursos a las tareas en Project. | 1d | 2017-04-25 A | 2017-04-25 A | 171 | 100% |  |  | 2017-04-25 | 2017-04-25 | 1d |  |  | finish no earlier than 2017-04-25 | Jose [30%] | 2.4h | 2.4h | 24 | 24 | 24 |
| 179 | 5.9 | Registrar de tiempos y % de realización de tareas en Project | 1d | 2017-04-25 A | 2017-04-25 A | 171 | 100% |  |  | 2017-04-25 | 2017-04-25 | 1d |  |  | start no earlier than 2017-04-25 | Jose [40%] | 3.2h | 3.2h | 32 | 32 | 32 |
| 180 | 5.10 | Optimizar el motor (2 técnicas) | 25d | 2017-04-17 | 2017-05-19 | 166, 167 |  |  |  | 2017-04-17 | 2017-05-19 | 25d | 5d |  | start no earlier than 2017-04-17 | Chema [25%] | 50h |  | 500 | 500 |  |
| 181 | 5.11 | Efectos visuales (2 efectos) | 25d | 2017-04-17 | 2017-05-19 | 166, 167 |  |  |  | 2017-04-17 | 2017-05-19 | 25d | 5d |  | start no earlier than 2017-04-17 | Chema [25%] | 50h |  | 500 | 500 |  |
| 182 | 5.12 | Extras (a determinar por el grupo) | 25d | 2017-04-17 | 2017-05-19 | 166, 167 |  |  |  | 2017-04-17 | 2017-05-19 | 25d | 5d |  | start no earlier than 2017-04-17 | Chema [25%] | 50h |  | 500 | 500 |  |
| 183 | 5.13 | Modelar articulos/productos | 25d | 2017-04-17 | 2017-05-19 | 166, 167 |  |  |  | 2017-04-17 | 2017-05-19 | 25d | 5d |  | start no earlier than 2017-04-17 | Chema [25%] | 50h |  | 500 | 500 |  |
| 184 | 5.14 | Enlazar Front-Back del CMS | 15d | 2017-04-24 | 2017-05-12 | 158 |  |  |  | 2017-04-24 | 2017-05-12 | 15d | 5d | 0d | finish no earlier than 2017-05-12 | Emilio | 120h |  | 1,200 | 1,200 |  |
| 185 | 5.15 | Enlazar Front-Back App Móvil | 15d | 2017-04-24 | 2017-05-12 | 159 |  |  |  | 2017-04-24 | 2017-05-12 | 15d | 5d | 0d | finish no earlier than 2017-05-12 | Sergio | 120h |  | 1,200 | 1,200 |  |

| ID | WBS | Task | Type | Duration | Start | Finish | Predecessors | Baseline start | Baseline finish | Baseline duration | Total slack | Constraint | Resources | Work | Cost | Baseline cost |
| --- | --- | --- | --- | --- | --- | --- | --- | --- | --- | --- | --- | --- | --- | --- | --- | --- |
| 186 | 5.16 | **Documentar pruebas** |  | 5d | 2017-05-15 | 2017-05-19 | 184, 185 | 2017-05-15 | 2017-05-19 | 5d |  |  | Pablo | 40h | 400 | 400 |
| 187 | 5.16.1 | Funcionalidades principales |  | 5d | 2017-05-15 | 2017-05-19 |  | 2017-05-15 | 2017-05-19 | 5d | 5d | start no earlier than 2017-05-15 |  |  |  |  |
| 188 | 5.16.2 | Demostración que no hay errores |  | 5d | 2017-05-15 | 2017-05-19 |  | 2017-05-15 | 2017-05-19 | 5d | 5d | start no earlier than 2017-05-15 |  |  |  |  |
| 189 | 5.16.3 | Seguridad de Front End |  | 5d | 2017-05-15 | 2017-05-19 |  | 2017-05-15 | 2017-05-19 | 5d | 5d | start no earlier than 2017-05-15 |  |  |  |  |
| 190 | 5.16.4 | Rendimiento |  | 5d | 2017-05-15 | 2017-05-19 |  | 2017-05-15 | 2017-05-19 | 5d | 5d | start no earlier than 2017-05-15 |  |  |  |  |
| 191 | 5.17 | **Validar Funcionalidades** |  | 1d | 2017-05-24 | 2017-05-24 | 186 | 2017-05-24 | 2017-05-24 | 1d |  |  | Emilio; Jose; Pablo; Sergio | 32h | 320 | 320 |
| 192 | 5.17.1 | Comprobación de veracidad de implementación |  | 1d | 2017-05-24 | 2017-05-24 |  | 2017-05-24 | 2017-05-24 | 1d | 2d |  |  |  |  |  |
| 193 | 5.17.2 | Interfaces implementadas |  | 1d | 2017-05-24 | 2017-05-24 |  | 2017-05-24 | 2017-05-24 | 1d | 2d |  |  |  |  |  |
| 194 | 5.18 | Validación del funcionamiento |  | 3d | 2017-05-22 | 2017-05-24 | 154 | 2017-05-22 | 2017-05-24 | 3d | 2d | finish no earlier than 2017-05-24 | Chema | 24h | 240 | 240 |
| 195 | 5.19 | Comparar la planificación prevista y real en Project Hito 4. | manual | 1d? | 2017-04-06 | 2017-04-06 |  | 2017-04-06 | 2017-04-06 | 1d? |  |  |  |  |  |  |
| 196 | 5.20 | Elaborar la presentación del Hito 4 | manual | 1d? | 2017-04-06 | 2017-04-06 |  | 2017-04-06 | 2017-04-06 | 1d? |  |  |  |  |  |  |
| 197 | 5.21 | Exponer la presentación del Hito 4. | manual | 1d? | 2017-04-06 | 2017-04-06 |  | 2017-04-06 | 2017-04-06 | 1d? |  |  |  |  |  |  |
| 199 | 6 | PM | manual | 1d | 2016-10-03 | 2016-10-03 |  | 2016-10-03 | 2016-10-03 | 1d |  |  |  |  |  |  |
| 200 | 7 | SMBI | manual | 1d | 2016-10-03 | 2016-10-03 |  | 2016-10-03 | 2016-10-03 | 1d |  |  |  |  |  |  |
| 201 | 8 | SMA | manual | 1d | 2016-10-03 | 2016-10-03 |  | 2016-10-03 | 2016-10-03 | 1d |  |  |  |  |  |  |
| 202 | 9 | TAG | manual | 1d | 2016-10-03 | 2016-10-03 |  | 2016-10-03 | 2016-10-03 | 1d |  |  |  |  |  |  |
| 203 | 10 | SDM | manual | 1d | 2016-10-03 | 2016-10-03 |  | 2016-10-03 | 2016-10-03 | 1d |  |  |  |  |  |  |
| 204 | 11 | E | manual | 1d | 2016-10-03 | 2016-10-03 |  | 2016-10-03 | 2016-10-03 | 1d |  |  |  |  |  |  |
| 205 | 12 | PD | manual | 1d | 2016-10-03 | 2016-10-03 |  | 2016-10-03 | 2016-10-03 | 1d |  |  |  |  |  |  |
| 206 | 13 | NM | manual | 1d | 2016-10-03 | 2016-10-03 |  | 2016-10-03 | 2016-10-03 | 1d |  |  |  |  |  |  |
